How a schedule from MS Project XML changed from version to version. A marks actual dates.

## Version 1 (saved 2021-03-29)

Note of the change: Fixed problems with SubTasking in schedule preprocessing and mappings

| ID | WBS | Task | Duration | Start | Finish | Predecessors | Total float |
| --- | --- | --- | --- | --- | --- | --- | --- |
| 1 | 1 | **RST Adv. Sample Project** | 190d | 2009-10-12 | 2010-07-02 |  | 0d |
| 2 | 1.1 | **Division 1** | 150d | 2009-10-12 | 2010-05-07 |  | 0d |
| 3 | 1.1.1 | **Substructure** | 30d | 2009-10-12 | 2009-11-20 |  | 0d |
| 4 |  | Piles and Caps | 20d | 2009-10-12 | 2009-11-06 |  | 0d |
| 5 |  | Floor Slab (Floor 0) | 10d | 2009-11-09 | 2009-11-20 | 4 | 0d |
| 6 | 1.1.2 | **Floor 1** | 40d | 2009-11-23 | 2010-01-15 |  | 0d |
| 7 |  | Emergency staircase shaft | 7d | 2009-11-23 | 2009-12-01 | 5 | 139d |
| 8 |  | Concrete Rd Columns | 20d | 2009-11-23 | 2009-12-18 | 5 | 0d |
| 9 |  | Beams and Floor Slab (Floor 1) | 20d | 2009-12-21 | 2010-01-15 | 8 | 40d |
| 10 | 1.1.3 | **Floor 2** | 40d | 2010-01-18 | 2010-03-12 |  | 40d |
| 11 |  | Emergency staircase shaft | 7d | 2010-01-18 | 2010-01-26 | 9 | 113d |
| 12 |  | Concrete Rd Columns | 20d | 2010-01-18 | 2010-02-12 | 9 | 40d |
| 13 |  | Beams and Floor Slab (Floor 2) | 20d | 2010-02-15 | 2010-03-12 | 12 | 40d |
| 14 | 1.1.4 | **Floor 3** | 40d | 2010-03-15 | 2010-05-07 |  | 40d |
| 15 |  | Emergency staircase shaft | 7d | 2010-03-15 | 2010-03-23 | 13 | 73d |
| 16 |  | Concrete Rd Columns | 20d | 2010-03-15 | 2010-04-09 | 13 | 40d |
| 17 |  | Beams and Roof Slab | 20d | 2010-04-12 | 2010-05-07 | 16 | 40d |
| 18 | 1.2 | **Division 2** | 150d | 2009-11-09 | 2010-06-04 |  | 9d |
| 19 | 1.2.1 | **Substructure** | 18d | 2009-11-09 | 2009-12-02 |  | 12d |
| 20 |  | Piles and Caps | 10d | 2009-11-09 | 2009-11-20 | 4 | 12d |
| 21 |  | Floor Slab (Floor 0) | 8d | 2009-11-23 | 2009-12-02 | 20 | 12d |
| 22 | 1.2.2 | **Floor 1** | 40d | 2009-12-21 | 2010-02-12 |  | 0d |
| 23 |  | Concrete Rd Columns | 20d | 2009-12-21 | 2010-01-15 | 21, 8 | 0d |
| 24 |  | Beams and Floor Slab (Floor 1) | 20d | 2010-01-18 | 2010-02-12 | 23 | 9d |
| 25 | 1.2.3 | **Floor 2** | 40d | 2010-02-15 | 2010-04-09 |  | 9d |
| 26 |  | Concrete Rd Columns | 20d | 2010-02-15 | 2010-03-12 | 24 | 9d |
| 27 |  | Beams and Floor Slab (Floor 2) | 20d | 2010-03-15 | 2010-04-09 | 26 | 9d |
| 28 | 1.2.4 | **Floor 3** | 40d | 2010-04-12 | 2010-06-04 |  | 9d |
| 29 |  | Concrete Rd Columns | 20d | 2010-04-12 | 2010-05-07 | 27 | 9d |
| 30 |  | Beams and Roof Slab | 20d | 2010-05-10 | 2010-06-04 | 29 | 9d |
| 31 | 1.3 | **Division 3** | 160d | 2009-11-23 | 2010-07-02 |  | 0d |
| 32 | 1.3.1 | **Substructure** | 18d | 2009-11-23 | 2009-12-16 |  | 22d |
| 33 |  | Piles and Caps | 10d | 2009-11-23 | 2009-12-04 | 20 | 22d |
| 34 |  | Floor Slab (Floor 0) | 8d | 2009-12-07 | 2009-12-16 | 33 | 22d |
| 35 | 1.3.2 | **Floor 1** | 62d | 2009-12-17 | 2010-03-12 |  | 22d |
| 36 |  | Emergency staircase shaft | 7d | 2009-12-17 | 2009-12-25 | 34, 7 | 128d |
| 37 |  | Concrete Rd Columns | 20d | 2010-01-18 | 2010-02-12 | 34, 23 | 0d |
| 38 |  | Beams and Floor Slab (Floor 1) | 20d | 2010-02-15 | 2010-03-12 | 37 | 0d |
| 39 | 1.3.3 | **Floor 2** | 40d | 2010-03-15 | 2010-05-07 |  | 0d |
| 40 |  | Emergency staircase shaft | 7d | 2010-03-15 | 2010-03-23 | 36, 38 | 73d |
| 41 |  | Concrete Rd Columns | 20d | 2010-03-15 | 2010-04-09 | 38 | 0d |
| 42 |  | Beams and Floor Slab (Floor 2) | 20d | 2010-04-12 | 2010-05-07 | 41 | 0d |
| 43 | 1.3.4 | **Floor 3** | 40d | 2010-05-10 | 2010-07-02 |  | 0d |
| 44 |  | Emergency staircase shaft | 7d | 2010-05-10 | 2010-05-18 | 42 | 33d |
| 45 |  | Concrete Rd Columns | 20d | 2010-05-10 | 2010-06-04 | 42 | 0d |
| 46 |  | Beams and Roof Slab | 20d | 2010-06-07 | 2010-07-02 | 45 | 0d |
| 47 | 1.4 | **Entrance canopy** | 11d | 2010-06-07 | 2010-06-21 |  | 9d |
| 48 |  | Round foundations | 5d | 2010-06-07 | 2010-06-11 | 30 | 9d |
| 49 |  | Steel | 1d | 2010-06-14 | 2010-06-14 | 48 | 9d |
| 50 |  | Concrete Roof | 5d | 2010-06-15 | 2010-06-21 | 49 | 9d |

## Version 2 (saved 2021-11-11)

Note of the change: Added a lot of functionalities

Last finish 2010-07-02 → 2023-10-25 (+4863d).

Added:

| ID | Task | Duration | Start | Finish | Predecessors | Constraint |
| --- | --- | --- | --- | --- | --- | --- |
| 2 | **HITOS** | 91d | 2020-08-07 | 2020-12-11 |  |  |
| 3 | REPOSICIÓN PROVISIONAL TEL&ORA EL CARMEN | 17d | 2020-08-27 | 2020-09-18 |  | start no earlier than 2020-08-27 |
| 4 | APROBACIÓN ACO LOSA N0 | 0d | 2020-09-18 | 2020-09-18 |  | start no earlier than 2020-09-18 |
| 5 | APROBACIÓN ACO CIMENTACIONES PASARELA | 0d | 2020-08-12 | 2020-08-12 | 196SS-4d |  |
| 6 | APROBACIÓN ACO ESTRUCTURA PASARELA | 0d | 2020-08-10 | 2020-08-10 | 194SS |  |
| 7 | APROBACIÓN ACO MARQUESINAS | 0d | 2020-09-25 | 2020-09-25 | 185SS-31d |  |
| 8 | APROBACIÓN ACO ANDENES | 0d | 2020-08-07 | 2020-08-07 | 160SS-21d |  |
| 9 | APROBACIÓN ACO DRENAJE PLAYA DE VÍAS | 0d | 2020-09-30 | 2020-09-30 | 180SS-1d |  |
| 10 | APROBACIÓN ACO PANTALLAS ANCLAJES ACTIVOS | 0d | 2020-09-28 | 2020-09-28 |  | start no earlier than 2020-09-28 |
| 11 | TRABAJOS CMS CONEXIÓN PLAYA VIAS SUR CON V1 ACTUAL | 3d | 2020-11-30 | 2020-12-02 | 134FS-2d |  |
| 12 | INICIO ACTUACIONES EN OBRA DE PROTECCIÓN DE VIGILANCIA ANDENES | 0d | 2020-11-05 | 2020-11-05 | 161, 168, 175 |  |
| 13 | INICIO ACTUACIONES EN OBRA DE PROTECCIÓN VIGILANCIA CUARTO TÉCNICO | 0d | 2020-12-11 | 2020-12-11 | 223 |  |
| 15 | **PS** | 54d | 2020-07-20 | 2020-10-01 |  |  |
| 16 | PANTALLA SUR PS | 22d | 2020-07-20 | 2020-08-18 |  | start no earlier than 2020-07-20 |
| 17 | PANTALLA SUR E INTERMEDIA SUR SSAA ORANGE Y TELEFÓNICA | 6d | 2020-09-18 | 2020-09-25 | 3FS-1d |  |
| 18 | PANTALLA SUR LOSA S1-20 | 4d | 2020-09-28 | 2020-10-01 | 17 |  |
| 19 | **PIS** | 22d | 2020-07-20 | 2020-08-18 |  |  |
| 20 | PANTALLA INTERMEDIA SUR PIS | 22d | 2020-07-20 | 2020-08-18 |  | start no earlier than 2020-07-20 |
| 21 | **PIN** | 24d | 2020-09-08 | 2020-10-09 |  |  |
| 22 | PANTALLA INTERMEDIA NORTE N4 | 5d | 2020-09-08 | 2020-09-14 | 282 |  |
| 23 | PANTALLAS TAPE (NP) | 5d | 2020-10-05 | 2020-10-09 | 18FS+1d |  |
| 24 | **PN** | 78d | 2020-07-20 | 2020-11-04 |  |  |
| 25 | PANTALLA NORTE N4 | 10d | 2020-10-12 | 2020-10-23 | 10FS+5d, 23 |  |
| 26 | PANTALLA NORTE PN SALVO BATACHES VÍA ACTUAL N3 | 20d | 2020-07-20 | 2020-08-14 |  |  |
| 27 | PANTALLA NORTE E INTERMEDIA NORTE SSAA ORANGE Y TELEFÓNICA | 7d | 2020-10-27 | 2020-11-04 | 25FS+1d |  |
| 28 | **PILOTES** | 28d | 2020-08-05 | 2020-09-11 |  |  |
| 29 | PILOTES S1 | 8d | 2020-08-05 | 2020-08-14 |  |  |
| 30 | DESCABEZADO PILOTES S1 | 5d | 2020-08-28 | 2020-09-03 | 29SS+4d, 197FS+4d |  |
| 31 | PILOTES N0 | 4d | 2020-08-27 | 2020-09-01 | 29, 197FS+3d |  |
| 32 | DESCABEZADO PILOTES N0 | 2d | 2020-09-10 | 2020-09-11 | 34SS |  |
| 33 | PILAS RECTANGULARES N0 | 7d | 2020-08-19 | 2020-08-27 |  | start no earlier than 2020-08-19 |
| 34 | DESCABEZADO PILAS RECTANGULARES N0 | 2d | 2020-09-10 | 2020-09-11 | 118SS-1d |  |
| 35 | **LOSA** | 73d | 2020-07-20 | 2020-10-28 |  |  |
| 36 | **LOSA S1-03** | 10d | 2020-07-20 | 2020-07-31 |  |  |
| 37 | HORMIGÓN DE LIMPIEZA LOSA S1-03 | 5d | 2020-07-20 | 2020-07-24 |  |  |
| 38 | FERRALLADO Y ENCOFRADO LOSA S1-03 | 4d | 2020-07-27 | 2020-07-30 | 37 |  |
| 39 | HORMIGONADO LOSA S1-03 | 1d | 2020-07-31 | 2020-07-31 | 38 |  |
| 40 | **LOSA S1-05** | 13d | 2020-07-20 | 2020-08-05 |  |  |
| 41 | HORMIGÓN DE LIMPIEZA LOSA S1-05 | 10d | 2020-07-20 | 2020-07-31 |  |  |
| 42 | FERRALLADO Y ENCOFRADO LOSA S1-05 | 5d | 2020-07-29 | 2020-08-04 | 38FS-2d |  |
| 43 | HORMIGONADO LOSA S1-05 | 1d | 2020-08-05 | 2020-08-05 | 41, 42 |  |
| 44 | **LOSA S1-08** | 10d | 2020-07-31 | 2020-08-13 |  |  |
| 45 | HORMIGÓN DE LIMPIEZA LOSA S1-08 | 4d | 2020-07-31 | 2020-08-05 |  |  |
| 48 | **LOSA S1-10** | 11d | 2020-08-04 | 2020-08-18 |  |  |
| 52 | **LOSA S1-04** | 12d | 2020-08-06 | 2020-08-21 |  |  |
| 53 | HORMIGÓN DE LIMPIEZA LOSA S1-04 | 4d | 2020-08-06 | 2020-08-11 |  |  |
| 56 | **LOSA S1-09** | 12d | 2020-08-10 | 2020-08-25 |  |  |
| 58 | FERRALLADO Y ENCOFRADO LOSA S1-09 | 4d | 2020-08-18 | 2020-08-21 | 54FS-2d |  |
| 60 | **LOSA S1-11** | 8d | 2020-08-18 | 2020-08-27 |  |  |
| 61 | HORMIGÓN DE LIMPIEZA LOSA S1-11 | 4d | 2020-08-18 | 2020-08-21 |  |  |
| 62 | FERRALLADO Y ENCOFRADO LOSA S1-11 | 4d | 2020-08-20 | 2020-08-25 | 58FS-2d |  |
| 64 | **LOSA S1-12** | 7d | 2020-08-24 | 2020-09-01 |  |  |
| 66 | FERRALLADO Y ENCOFRADO LOSA S1-12 | 3d | 2020-08-27 | 2020-08-31 | 65 |  |
| 67 | HORMIGONADO LOSA S1-12 | 1d | 2020-09-01 | 2020-09-01 | 65, 66 |  |
| 68 | **LOSA S1-13** | 8d | 2020-08-26 | 2020-09-04 |  |  |
| 69 | HORMIGÓN DE LIMPIEZA LOSA S1-13 | 5d | 2020-08-26 | 2020-09-01 |  |  |
| 70 | FERRALLADO Y ENCOFRADO LOSA S1-13 | 4d | 2020-08-31 | 2020-09-03 | 66FS-1d |  |
| 71 | HORMIGONADO LOSA S1-13 | 1d | 2020-09-04 | 2020-09-04 | 69, 70 |  |
| 72 | **LOSA S1-16** | 14d | 2020-08-25 | 2020-09-11 |  |  |
| 75 | HORMIGONADO LOSA S1-16 | 1d | 2020-09-11 | 2020-09-11 | 73, 74 |  |
| 76 | **LOSA S1-15** | 18d | 2020-08-26 | 2020-09-18 |  |  |
| 77 | HORMIGÓN DE LIMPIEZA LOSA S1-15 | 8d | 2020-08-26 | 2020-09-04 | 197FS+2d |  |
| 79 | HORMIGONADO LOSA S1-15 | 1d | 2020-09-18 | 2020-09-18 | 77, 78, 75, 83SS |  |
| 80 | **LOSA S1-14** | 9d | 2020-09-08 | 2020-09-18 |  |  |
| 83 | HORMIGONADO LOSA S1-14 | 1d | 2020-09-18 | 2020-09-18 | 81, 82 |  |
| 84 | **LOSA S1-17** | 14d | 2020-09-08 | 2020-09-25 |  |  |
| 85 | HORMIGÓN DE LIMPIEZA LOSA S1-17 | 5d | 2020-09-08 | 2020-09-14 | 73FS+3d |  |
| 86 | FERRALLADO Y ENCOFRADO LOSA S1-17 | 4d | 2020-09-21 | 2020-09-24 | 85FS+4d |  |
| 87 | HORMIGONADO LOSA S1-17 | 1d | 2020-09-25 | 2020-09-25 | 85, 86 |  |
| 88 | **LOSA S1-06** | 7d | 2020-09-28 | 2020-10-06 |  |  |
| 89 | HORMIGÓN DE LIMPIEZA LOSA S1-06 | 2d | 2020-09-28 | 2020-09-29 | 85FS+1d, 17 |  |
| 90 | FERRALLADO Y ENCOFRADO LOSA S1-06 | 3d | 2020-09-30 | 2020-10-02 | 89 |  |
| 91 | HORMIGONADO LOSA S1-06 | 1d | 2020-10-06 | 2020-10-06 | 89FS+1d, 90FS+1d |  |
| 92 | **LOSA S1-07** | 7d | 2020-09-28 | 2020-10-06 |  |  |
| 93 | HORMIGÓN DE LIMPIEZA LOSA S1-07 | 2d | 2020-09-28 | 2020-09-29 | 89SS |  |
| 94 | FERRALLADO Y ENCOFRADO LOSA S1-07 | 3d | 2020-09-30 | 2020-10-02 | 93 |  |
| 95 | HORMIGONADO LOSA S1-07 | 1d | 2020-10-06 | 2020-10-06 | 89FS+1d, 90FS+1d |  |
| 96 | **LOSA S1-02** | 5d | 2020-10-05 | 2020-10-09 |  |  |
| 97 | HORMIGÓN DE LIMPIEZA LOSA S1-02 | 1d | 2020-10-05 | 2020-10-05 | 93FS+3d |  |
| 98 | FERRALLADO Y ENCOFRADO LOSA S1-02 | 3d | 2020-10-06 | 2020-10-08 | 97 |  |
| 99 | HORMIGONADO LOSA S1-02 | 1d | 2020-10-09 | 2020-10-09 | 98 |  |
| 100 | **LOSA S1-01** | 5d | 2020-10-05 | 2020-10-09 |  |  |
| 101 | HORMIGÓN DE LIMPIEZA LOSA S1-01 | 1d | 2020-10-05 | 2020-10-05 | 97SS |  |
| 102 | FERRALLADO Y ENCOFRADO LOSA S1-01 | 3d | 2020-10-06 | 2020-10-08 | 101 |  |
| 103 | HORMIGONADO LOSA S1-01 | 1d | 2020-10-09 | 2020-10-09 | 102 |  |
| 104 | **LOSA S1-18** | 10d | 2020-10-05 | 2020-10-16 |  |  |
| 105 | HORMIGÓN DE LIMPIEZA LOSA S1-18 | 3d | 2020-10-05 | 2020-10-07 | 97SS |  |
| 106 | FERRALLADO Y ENCOFRADO LOSA S1-18 | 4d | 2020-10-09 | 2020-10-14 | 101FS+3d, 123FS+3d |  |
| 107 | HORMIGONADO LOSA S1-18 | 1d | 2020-10-16 | 2020-10-16 | 106FS+1d |  |
| 108 | **LOSA S1-19** | 11d | 2020-10-05 | 2020-10-19 |  |  |
| 109 | HORMIGÓN DE LIMPIEZA LOSA S1-19 | 3d | 2020-10-05 | 2020-10-07 | 97SS |  |
| 110 | FERRALLADO Y ENCOFRADO LOSA S1-19 | 5d | 2020-10-09 | 2020-10-15 | 101FS+3d, 123FS+3d |  |
| 111 | HORMIGONADO LOSA S1-19 | 1d | 2020-10-19 | 2020-10-19 | 110FS+1d |  |
| 112 | **LOSA S1-20** | 13d | 2020-10-05 | 2020-10-21 |  |  |
| 113 | HORMIGÓN DE LIMPIEZA LOSA S1-20 | 2d | 2020-10-05 | 2020-10-06 | 97SS |  |
| 114 | FERRALLADO Y ENCOFRADO LOSA S1-20 | 6d | 2020-10-09 | 2020-10-16 | 101FS+3d, 123FS+3d |  |
| 115 | HORMIGONADO LOSA S1-20 | 1d | 2020-10-21 | 2020-10-21 | 114FS+2d |  |
| 116 | **LOSA N0-01 + AMPLIACION PARKING** | 14d | 2020-09-07 | 2020-09-24 |  |  |
| 117 | RETRANQUEO SSAA Y FAROLAS (OCUPACION PARKING SABA) | 2d | 2020-09-07 | 2020-09-08 | 3SS+7d |  |
| 118 | HORMIGÓN DE LIMPIEZA LOSA N0-01 | 2d | 2020-09-11 | 2020-09-14 | 117FS+2d |  |
| 119 | FERRALLADO Y ENCOFRADO LOSA N0-01 | 5d | 2020-09-17 | 2020-09-23 | 118, 4FS-1d |  |
| 120 | HORMIGONADO LOSA N0-01 | 1d | 2020-09-24 | 2020-09-24 | 118, 119 |  |
| 121 | **LOSA N0-02** | 11d | 2020-09-17 | 2020-10-01 |  |  |
| 122 | HORMIGÓN DE LIMPIEZA LOSA N0-02 | 1d | 2020-09-17 | 2020-09-17 | 34FS+3d |  |
| 123 | FERRALLADO Y ENCOFRADO LOSA N0-02 | 5d | 2020-09-24 | 2020-09-30 | 119 |  |
| 124 | HORMIGONADO LOSA N0-02 | 1d | 2020-10-01 | 2020-10-01 | 123 |  |
| 125 | **LOSA N0-03** | 5d | 2020-10-16 | 2020-10-22 |  |  |
| 126 | HORMIGÓN DE LIMPIEZA LOSA N0-03 | 1d | 2020-10-19 | 2020-10-19 | 32, 34, 98SS+4d, 102, 106, 110, 114 |  |
| 127 | FERRALLADO Y ENCOFRADO LOSA N0-03 | 4d | 2020-10-16 | 2020-10-21 | 126FS-2d, 119FS-2d, 4FS-2d, 114FS-4d |  |
| 128 | HORMIGONADO LOSA N0-03 | 1d | 2020-10-22 | 2020-10-22 | 127, 32 |  |
| 129 | **IMPERMEABILIZACIÓN** | 17d | 2020-10-06 | 2020-10-28 |  |  |
| 130 | IMPERMEABILIZACIÓN LOSA S1-09 a S1-17 | 5d | 2020-10-06 | 2020-10-12 | 56FS+6d, 60FS+6d, 64FS+6d, 68FS+6d, 72FS+6d, 84FS+6d, 48FS+6d, 80FS+6d, 76FS+6d |  |
| 131 | IMPERMEABILIZACION SI-01 a SI-08 | 7d | 2020-10-13 | 2020-10-21 | 100, 96, 36, 52, 40, 88, 92, 44, 130 |  |
| 132 | IMPERMEABILIZACIÓN LOSA S1-18 a S1-20 | 3d | 2020-10-22 | 2020-10-26 | 104, 108, 112, 131 |  |
| 133 | IMPERMEABILIZACIÓN LOSA N0-01 y N0-02 | 2d | 2020-10-27 | 2020-10-28 | 120FS+5d, 124FS+5d, 132 |  |
| 135 | **V13S, V11S y V9S** | 55d | 2020-08-25 | 2020-11-09 |  |  |
| 136 | Retirada depósitos polímeros, desvíos, etc | 5d | 2020-08-25 | 2020-08-31 | 29, 197FS+1d |  |
| 138 | Levante, demolición y rebaje de tierras V13S (vía en placa) | 6d | 2020-09-25 | 2020-10-02 | 137FS+6d |  |
| 141 | Extendido de subbalasto V13S, V11S y V9S | 5d | 2020-10-08 | 2020-10-14 | 140FS+1d, 180FS-12d |  |
| 142 | Extendido de cama de balasto V13S, V11S y V9S | 2d | 2020-10-16 | 2020-10-19 | 141FS+1d |  |
| 143 | Montaje de vías V13S, V11S y V9S | 9d | 2020-10-19 | 2020-10-29 | 142FS-1d |  |
| 144 | Montaje de los tres desvíos del sur | 9d | 2020-10-19 | 2020-10-29 | 143SS |  |
| 145 | Extendido de balasto V13S, V11S y V9S | 9d | 2020-10-19 | 2020-10-29 | 143SS, 144SS |  |
| 146 | Levantes de vía V13S,V11S y V9S y desvíos sur | 6d | 2020-11-02 | 2020-11-09 | 145, 154 |  |
| 147 | Colocación de postes HM y KM en vías V13S, V11S y V9S | 6d | 2020-11-02 | 2020-11-09 | 146SS |  |
| 148 | **V7S y V5S** | 19d | 2020-10-14 | 2020-11-09 |  |  |
| 149 | Colocación de manta antiruido en vías V7S y V5S | 12d | 2020-10-14 | 2020-10-29 | 130FS+1d, 132FF+1d |  |
| 150 | Extendido de capa de forma y subbalasto V7S y V5S | 7d | 2020-10-22 | 2020-10-30 | 149FS-6d |  |
| 151 | Extendido cama de balasto V7S y V5S | 7d | 2020-10-22 | 2020-10-30 | 149FS-6d |  |
| 152 | Montaje de vías V7S y V5S | 7d | 2020-10-22 | 2020-10-30 | 149FS-6d |  |
| 153 | Montaje desvíos norte | 7d | 2020-10-22 | 2020-10-30 | 149FS-6d |  |
| 154 | Extendido de balasto a vía V7S | 7d | 2020-10-22 | 2020-10-30 | 152SS, 153SS |  |
| 155 | Levantes de vía V7S y V5S y desvíos norte | 6d | 2020-11-02 | 2020-11-09 | 146SS |  |
| 156 | Postes HM y Km V7S y V5S | 6d | 2020-11-02 | 2020-11-09 | 155SS |  |
| 157 | **ANDENES** | 59d | 2020-09-07 | 2020-11-26 |  |  |
| 158 | **ANDÉN 1** | 59d | 2020-09-07 | 2020-11-26 |  |  |
| 159 | Muro prefabricado andén 1 sur | 6d | 2020-10-22 | 2020-10-29 | 149FS-9d, 154FF-1d |  |
| 160 | Muro in situ andén 1 norte | 27d | 2020-09-07 | 2020-10-13 | 40FF+5d, 88FF+5d, 92FF+5d, 44FF+5d, 56FF+5d, 48FF+5d, 60FF+5d, 64FF+5d, 68FF+5d, 80FF+5d, 76FF+5d, 72FF+5d |  |
| 161 | Prisma de instalaciones andén 1 | 5d | 2020-10-29 | 2020-11-04 | 160FS-1d, 159FS-1d |  |
| 162 | Relleno de tierras de andén 1 | 6d | 2020-10-29 | 2020-11-05 | 160FS-1d, 159FS-1d |  |
| 163 | Solados andén 1 y pieza borde de andén | 6d | 2020-11-06 | 2020-11-13 | 162 |  |
| 164 | Acabados andén 1 | 9d | 2020-11-16 | 2020-11-26 | 163 |  |
| 165 | **ANDÉN 2** | 38d | 2020-10-06 | 2020-11-26 |  |  |
| 166 | Muro prefabricado andén 2 sur | 6d | 2020-10-06 | 2020-10-13 | 140FS-1d |  |
| 167 | Muro prefabricado andén 2 norte | 6d | 2020-10-22 | 2020-10-29 | 149FS-9d, 154FF-1d |  |
| 168 | Prisma instalaciones andén 2 | 5d | 2020-10-30 | 2020-11-05 | 166, 167 |  |
| 169 | Relleno de tierras de andén 2 | 6d | 2020-10-30 | 2020-11-06 | 166, 167 |  |
| 170 | Solados andén 2 y pieza borde de andén | 6d | 2020-11-06 | 2020-11-13 | 168 |  |
| 171 | Acabados andén 2 | 9d | 2020-11-16 | 2020-11-26 | 170 |  |
| 172 | **ANDÉN 3** | 38d | 2020-10-06 | 2020-11-26 |  |  |
| 173 | Muro prefabricado andén 3 sur | 6d | 2020-10-06 | 2020-10-13 | 140FS-1d |  |
| 174 | Muro prefabricado andén 3 norte | 6d | 2020-10-06 | 2020-10-13 | 140FS-1d |  |
| 175 | Prisma de instalaciones andén 3 | 5d | 2020-10-14 | 2020-10-20 | 173, 174 |  |
| 176 | Relleno de tierras de andén 3 | 6d | 2020-10-14 | 2020-10-21 | 173, 174 |  |
| 177 | Solados de andén 3 y pieza borde de andén | 6d | 2020-10-22 | 2020-10-29 | 176 |  |
| 178 | Acabados andén 3 | 9d | 2020-11-16 | 2020-11-26 | 177, 164SS, 171SS |  |
| 179 | **VARIOS** | 44d | 2020-10-01 | 2020-12-01 |  |  |
| 181 | Ejecución de toperas | 5d | 2020-11-25 | 2020-12-01 | 231 |  |
| 182 | Señalética andenes | 5d | 2020-11-20 | 2020-11-26 | 158FS-5d, 165FS-5d, 172FS-5d |  |
| 183 | Soldadura y neutralizaciones | 13d | 2020-11-10 | 2020-11-26 | 146, 155, 144, 153 |  |
| 184 | Mobiliario urbano | 5d | 2020-11-20 | 2020-11-26 | 158FS-5d, 165FS-5d, 172FS-5d |  |
| 185 | **MARQUESINAS ANDENES SUR** | 10d | 2020-11-09 | 2020-11-20 |  |  |
| 186 | MARQUESINAS andén 3 | 10d | 2020-11-09 | 2020-11-20 | 176, 169, 162 |  |
| 187 | MARQUESINAS andén 2 | 10d | 2020-11-09 | 2020-11-20 | 169, 176, 162 |  |
| 188 | MARQUESINAS andén 1 | 10d | 2020-11-09 | 2020-11-20 | 162, 176, 169 |  |
| 189 | MARQUESINAS auxiliares andén 3 | 10d | 2020-11-09 | 2020-11-20 | 176, 169, 162 |  |
| 190 | MARQUESINAS auxiliares andén 2 | 10d | 2020-11-09 | 2020-11-20 | 169, 176, 162 |  |
| 191 | MARQUESINAS auxiliares andén 1 | 10d | 2020-11-09 | 2020-11-20 | 162, 176, 169 |  |
| 192 | **PASARELA ESTACIÓN** | 92d | 2020-08-10 | 2020-12-15 |  |  |
| 193 | **ESTRUCTURA** | 91d | 2020-08-10 | 2020-12-14 |  |  |
| 194 | FABRICACIÓN | 79d | 2020-08-10 | 2020-11-26 |  |  |
| 195 | SUMINISTRO DE MATERIAL | 30d | 2020-10-26 | 2020-12-04 | 204SS |  |
| 196 | **CIMENTACIÓN CASTILLETES** | 48d | 2020-08-18 | 2020-10-22 |  |  |
| 197 | CIMENTACIÓN NÚCLEO 4 _PILOTES | 4d | 2020-08-18 | 2020-08-21 | 29FS+1d |  |
| 198 | DESCABEZADO PILOTES NÚCLEO 4 | 3d | 2020-09-03 | 2020-09-07 | 197FS+1d, 73FS-2d, 77FS-2d |  |
| 199 | CIMENTACIÓN NÚCLEO 4 _ENCEPADO/MUROS | 15d | 2020-09-30 | 2020-10-20 | 198FS+16d |  |
| 200 | CIMENTACIÓN NÚCLEO 3_ MUROS | 11d | 2020-09-30 | 2020-10-14 | 76FS+7d |  |
| 201 | CIMENTACIÓN NÚCLEO 2_ MUROS | 10d | 2020-10-09 | 2020-10-22 | 120FS+5d, 124FS+5d |  |
| 202 | CIMENTACIÓN NÚCLEO 1_ MUROS | 10d | 2020-10-09 | 2020-10-22 | 120FS+5d, 124FS+5d |  |
| 203 | **CASTILLETES** | 20d | 2020-10-26 | 2020-11-20 |  |  |
| 204 | SUM. Y MONTAJE EN OBRA DE CASTILLETE NÚCLEO 4 | 8d | 2020-10-26 | 2020-11-04 | 199FS+3d |  |
| 205 | SUM. Y MONTAJE EN OBRA DE CASTILLETE NÚCLEO 3 | 7d | 2020-11-02 | 2020-11-10 | 204FS-3d, 200 |  |
| 206 | SUM. Y MONTAJE EN OBRA DE CASTILLETE NÚCLEO 2 | 6d | 2020-11-06 | 2020-11-13 | 201FS+1d, 205FS-3d |  |
| 207 | SUM. Y MONTAJE EN OBRA DE CASTILLETE NÚCLEO 1 | 5d | 2020-11-16 | 2020-11-20 | 202, 206 |  |
| 208 | **VANOS** | 19d | 2020-11-16 | 2020-12-10 |  |  |
| 209 | MONTAJE EN OBRA DE VANO 3 (CASTILLETE 4-3) | 7d | 2020-11-16 | 2020-11-24 | 204FS+3d, 205FS+3d |  |
| 210 | MONTAJE EN OBRA DE VANO 2 (CASTILLETE 3-2) | 7d | 2020-11-19 | 2020-11-27 | 205FS+3d, 206FS+3d |  |
| 211 | MONTAJE EN OBRA DE VANO 1 (CASTILLETE 2-1) | 7d | 2020-11-26 | 2020-12-04 | 206FS+3d, 207FS+3d |  |
| 212 | HORMIGONADO DE FORJADO | 2d | 2020-12-09 | 2020-12-10 | 209FS+2d, 210FS+2d, 211FS+2d |  |
| 213 | **ESCALERAS** | 16d | 2020-11-06 | 2020-11-27 |  |  |
| 214 | MONTAJE EN OBRA DE ESCALERA 3 (CASTILLETE 4) | 4d | 2020-11-06 | 2020-11-11 | 204FS+1d |  |
| 215 | MONTAJE EN OBRA DE ESCALERA 2 (CASTILLETE 3) | 4d | 2020-11-12 | 2020-11-17 | 205FS+1d |  |
| 216 | MONTAJE EN OBRA DE ESCALERA 1 (CASTILLETE 1) | 4d | 2020-11-24 | 2020-11-27 | 207FS+1d |  |
| 217 | **ACABADOS** | 16d | 2020-11-23 | 2020-12-14 |  |  |
| 218 | CUBIERTA, CANALON Y BAJANTES | 9d | 2020-11-26 | 2020-12-08 | 209SS, 210SS, 211SS |  |
| 219 | POLICARBONATO/REJILLA VENTILACIÓN | 9d | 2020-11-26 | 2020-12-08 | 209SS, 210SS, 211SS |  |
| 220 | PASAMANOS VANOS | 9d | 2020-11-26 | 2020-12-08 | 209SS, 210SS, 211SS |  |
| 221 | SOLADO PODOTÁCTIL | 2d | 2020-12-11 | 2020-12-14 | 212 |  |
| 222 | CERRAMIENTO CASTILLETES ASCENSORES. VIDRIO O CHAPA | 10d | 2020-11-23 | 2020-12-04 | 203 |  |
| 223 | **ENTRADA PASARELA** | 27d | 2020-11-05 | 2020-12-11 |  |  |
| 224 | MUROS | 9d | 2020-11-05 | 2020-11-17 | 133FS+5d |  |
| 225 | IMPERMEABILIZACIÓN MUROS | 5d | 2020-11-23 | 2020-11-27 | 224SS+12d |  |
| 226 | RELLENO TIERRAS Y COMPACTADO | 6d | 2020-11-30 | 2020-12-07 | 225SS+5d |  |
| 227 | LOSA SOLERA Y PAVIMENTO | 4d | 2020-12-08 | 2020-12-11 | 226 |  |
| 228 | **MONTAJE ASCENSORES** | 29d | 2020-11-05 | 2020-12-15 |  |  |
| 229 | **MONTAJE MECÁNICO** | 21d | 2020-11-05 | 2020-12-03 |  |  |
| 230 | ASCENSOR 5-6 (núcleo 4) | 7d | 2020-11-05 | 2020-11-13 | 204 |  |
| 231 | ASCENSOR 4-3 (núcleo 3) | 7d | 2020-11-16 | 2020-11-24 | 230, 205 |  |
| 232 | ASCENSOR 1-2 (núcleo 1) | 7d | 2020-11-25 | 2020-12-03 | 231, 207 |  |
| 233 | **MONTAJE ELÉCTRICO** | 7d | 2020-12-07 | 2020-12-15 |  |  |
| 234 | ASCENSOR 5-6 (núcleo 4) | 7d | 2020-12-07 | 2020-12-15 | 222, 230 |  |
| 235 | ASCENSOR 4-3 (núcleo 3) | 7d | 2020-12-07 | 2020-12-15 | 222, 231 |  |
| 236 | ASCENSOR 1-2 (núcleo 1) | 7d | 2020-12-07 | 2020-12-15 | 222, 232 |  |
| 237 | PUESTA A PUNTO | 1d | 2020-12-15 | 2020-12-15 | 233FS-1d |  |
| 239 | PRUEBA DE CARGA | 1d | 2020-12-15 | 2020-12-15 | 212FS+2d, 229FS-1d, 218FS-1d, 219FS-1d, 220FS-1d, 221FS-1d |  |
| 240 | **INSTALACIONES** | 60d | 2020-08-31 | 2020-11-20 |  |  |
| 241 | INGENIERÍA Y ESTUDIO | 15d | 2020-08-31 | 2020-09-18 |  | start no earlier than 2020-08-31 |
| 242 | SUMINISTRO DE MATERIAL | 5d | 2020-10-12 | 2020-10-16 | 241FS+15d |  |
| 243 | FONTANERÍA | 20d | 2020-10-21 | 2020-11-17 | 242, 175 |  |
| 244 | SANEAMIENTO | 20d | 2020-10-21 | 2020-11-17 | 242, 175 |  |
| 245 | ELECTRICIDAD | 20d | 2020-10-21 | 2020-11-17 | 242, 175 |  |
| 246 | TELECOMUNICACIONES - VOZ Y DATOS | 20d | 2020-10-21 | 2020-11-17 | 242, 175 |  |
| 247 | GESTIÓN CENTRALIZADA | 20d | 2020-10-21 | 2020-11-17 | 242, 175 |  |
| 248 | PROTECCIÓN CONTRA INCENDIOS | 20d | 2020-10-21 | 2020-11-17 | 242, 175 |  |
| 249 | PRUEBAS DE SERVICIO Y PUESTA EN MARCHA | 7d | 2020-11-12 | 2020-11-20 | 245FS-4d, 246FS-4d, 247FS-4d |  |
| 250 | **ACCESO PROVISIONAL AVE NORTE** | 381d | 2020-08-31 | 2022-03-18 |  |  |
| 251 | **HITOS** | 260d | 2020-11-05 | 2021-11-26 |  |  |
| 252 | APROBACIÓN ACO ESTRUCTURA ACCESO PROVISIONAL | 0d | 2020-11-18 | 2020-11-18 | 426SS |  |
| 253 | APROBACIÓN ACO LOSA SUPERIOR NORTE N1 | 0d | 2020-12-28 | 2020-12-28 | 288SS |  |
| 254 | APROBACIÓN ACO LOSA SUPERIOR NORTE N2 | 0d | 2020-11-05 | 2020-11-05 | 298SS |  |
| 255 | APROBACIÓN ACO LOSA SUPERIOR NORTE N3 | 0d | 2020-11-16 | 2020-11-16 | 311SS |  |
| 256 | APROBACIÓN ACO LOSA SUPERIOR NORTE N4 | 0d | 2020-11-27 | 2020-11-27 | 317SS |  |
| 257 | APROBACIÓN ACO LOSA SUPERIOR NORTE N5 | 0d | 2021-04-29 | 2021-04-29 | 322SS |  |
| 258 | APROBACIÓN ACO LOSA SUPERIOR C4 | 0d | 2021-02-24 | 2021-02-24 | 323SS |  |
| 259 | APROBACIÓN ACO LOSA INFERIOR NORTE N0 | 0d | 2021-05-17 | 2021-05-17 | 348SS |  |
| 260 | APROBACIÓN ACO LOSA INFERIOR NORTE N1 | 0d | 2021-06-14 | 2021-06-14 | 349SS |  |
| 261 | APROBACIÓN ACO LOSA INFERIOR NORTE N2 | 0d | 2021-04-19 | 2021-04-19 | 351SS |  |
| 262 | APROBACIÓN ACO LOSA INFERIOR NORTE N3 | 0d | 2021-08-20 | 2021-08-20 | 356SS, 357SS |  |
| 263 | APROBACIÓN ACO LOSA INFERIOR NORTE N4 | 0d | 2021-09-06 | 2021-09-06 | 358SS |  |
| 264 | APROBACIÓN ACO LOSA INFERIOR NORTE N5 | 0d | 2021-08-20 | 2021-08-20 | 360SS |  |
| 265 | APROBACIÓN ACO ANCLAJES ACTIVOS | 0d | 2021-01-28 | 2021-01-28 | 276SS-15d |  |
| 266 | PUESTA EN SERVICIO FASE 1C | 4d | 2021-03-05 | 2021-03-10 |  |  |
| 267 | SUMINISTRO DESVÍOS, VÍA Y TRAVIESAS ZONA ALDESA | 0d | 2021-09-01 | 2021-09-01 |  | start no earlier than 2021-09-01 |
| 268 | SUMINISTRO DESVÍOS, VÍA Y TRAVIESAS VASO NORTE | 0d | 2021-11-26 | 2021-11-26 | 394SS |  |
| 269 | **TÚNEL ZONA NORTE** | 331d | 2020-08-31 | 2021-12-28 |  |  |
| 270 | **PANTALLAS** | 124d | 2020-11-11 | 2021-05-25 |  |  |
| 271 | TAPES | 9d | 2020-11-11 | 2020-11-23 | 24FS+4d |  |
| 272 | **PIN** | 24d | 2021-04-22 | 2021-05-25 |  |  |
| 273 | PANTALLA INTERMEDIA NORTE PIN BATACHES VÍA ACTUAL | 24d | 2021-04-22 | 2021-05-25 | 275 |  |
| 274 | **PN** | 11d | 2021-04-07 | 2021-04-21 |  |  |
| 275 | PANTALLA NORTE PN BATACHES VÍA ACTUAL ZONA ANCLADA | 11d | 2021-04-07 | 2021-04-21 | 266FS+15d |  |
| 276 | **ANCLAJES ACTIVOS PN** | 93d | 2021-02-18 | 2021-07-02 |  |  |
| 277 | ANCLAJES ZONA N4 | 27d | 2021-02-18 | 2021-03-26 | 319FS+40d |  |
| 278 | ANCLAJES ZONA N5 | 30d | 2021-05-24 | 2021-07-02 | 322FS+5d |  |
| 279 | **SUBESTRUCTURA N1 N2 N3 Y N4** | 159d | 2020-08-31 | 2021-04-30 |  |  |
| 280 | PILOTES (SIN AFECTAR A VIA EN SERVICIO) | 23d | 2020-09-02 | 2020-10-02 | 31 |  |
| 281 | PILOTES (VÍA ACTUAL) | 8d | 2021-04-21 | 2021-04-30 | 273SS-1d, 266FS-1d |  |
| 282 | PILAS RECTANGULARES N1 | 6d | 2020-08-31 | 2020-09-07 | 33FS+1d |  |
| 283 | PILOTES N4 | 10d | 2020-10-12 | 2020-10-23 | 280FS+5d |  |
| 284 | **CORTE CON HILO - DEMOLICIÓN** | 30d | 2021-01-13 | 2021-02-23 |  |  |
| 285 | ZONA N4 | 20d | 2021-01-13 | 2021-02-09 |  |  |
| 286 | ZONA C4 | 20d | 2021-01-27 | 2021-02-23 | 285FS-10d |  |
| 287 | **LOSAS SUPERIORES** | 170d | 2020-11-05 | 2021-07-22 |  |  |
| 288 | **LOSA N1** | 135d | 2020-12-28 | 2021-07-22 |  |  |
| 289 | LOSA N1-01 (EXC, HL, ENCOF, FERRALLADO Y HORMIGONADO) | 7d | 2020-12-28 | 2021-01-18 |  |  |
| 290 | LOSA N1-02 (EXC, HL, ENCOF, FERRALLADO Y HORMIGONADO) | 7d | 2021-01-19 | 2021-01-27 | 289 |  |
| 291 | LOSA N1-03 (EXC, HL, ENCOF, FERRALLADO Y HORMIGONADO) | 7d | 2021-02-05 | 2021-02-15 | 295FS-4d |  |
| 292 | LOSA N1-04 (EXC, HL, ENCOF, FERRALLADO Y HORMIGONADO) | 7d | 2021-02-10 | 2021-02-18 | 291FS-4d |  |
| 293 | LOSA N1-05 (EXC, HL, ENCOF, FERRALLADO Y HORMIGONADO) | 7d | 2021-01-22 | 2021-02-01 | 289FS+3d |  |
| 294 | LOSA N1-06 (EXC, HL, ENCOF, FERRALLADO Y HORMIGONADO) | 8d | 2021-01-26 | 2021-02-04 | 293FS-5d |  |
| 295 | LOSA N1-07 (EXC, HL, ENCOF, FERRALLADO Y HORMIGONADO) | 8d | 2021-02-01 | 2021-02-10 | 293FS-4d, 294FS-4d |  |
| 296 | LOSA N1-08 (EXC, HL, ENCOF, FERRALLADO Y HORMIGONADO) | 4d | 2021-07-19 | 2021-07-22 | 348FS-5d, 349FS-5d |  |
| 297 | LOSA N1-09 (EXC, HL, ENCOF, FERRALLADO Y HORMIGONADO) | 4d | 2021-07-19 | 2021-07-22 | 348FS-5d, 349FS-5d |  |
| 298 | **LOSA N2** | 60d | 2020-11-05 | 2021-02-12 |  |  |
| 299 | LOSA N2-01 (EXC, HL, ENCOF, FERRALLADO Y HORMIGONADO) | 8d | 2020-12-01 | 2020-12-10 | 303FS+4d |  |
| 300 | LOSA N2-02 (EXC, HL, ENCOF, FERRALLADO Y HORMIGONADO) | 8d | 2020-11-06 | 2020-11-17 |  |  |
| 301 | LOSA N2-03 (EXC, HL, ENCOF, FERRALLADO Y HORMIGONADO) | 8d | 2020-11-05 | 2020-11-16 |  |  |
| 302 | LOSA N2-04 (EXC, HL, ENCOF, FERRALLADO Y HORMIGONADO) | 8d | 2020-12-02 | 2020-12-11 | 303FS+5d |  |
| 303 | LOSA N2-05 (EXC, HL, ENCOF, FERRALLADO Y HORMIGONADO) | 7d | 2020-11-16 | 2020-11-24 | 300FS-2d, 301FS-2d |  |
| 304 | LOSA N2-06 (EXC, HL, ENCOF, FERRALLADO Y HORMIGONADO) | 7d | 2020-12-10 | 2020-12-18 | 302FS-2d |  |
| 305 | LOSA N2-07 (EXC, HL, ENCOF, FERRALLADO Y HORMIGONADO) | 7d | 2020-12-16 | 2021-01-11 | 302FS+2d |  |
| 306 | LOSA N2-08 (EXC, HL, ENCOF, FERRALLADO Y HORMIGONADO) | 7d | 2020-12-22 | 2021-01-15 | 302FS+6d |  |
| 307 | LOSA N2-09 (EXC, HL, ENCOF, FERRALLADO Y HORMIGONADO) | 7d | 2020-12-22 | 2021-01-15 | 302FS+6d |  |
| 308 | LOSA N2-10 (EXC, HL, ENCOF, FERRALLADO Y HORMIGONADO) | 7d | 2021-02-04 | 2021-02-12 | 310FS-2d |  |
| 309 | LOSA N2-11 (EXC, HL, ENCOF, FERRALLADO Y HORMIGONADO) | 7d | 2021-01-19 | 2021-01-27 | 307FS+1d, 302FS+1d |  |
| 310 | LOSA N2-12 (EXC, HL, ENCOF, FERRALLADO Y HORMIGONADO) | 7d | 2021-01-28 | 2021-02-05 | 303, 309 |  |
| 311 | **LOSA N3** | 132d | 2020-11-16 | 2021-06-09 |  |  |
| 312 | LOSA N3-01 (EXC, HL, ENCOF, FERRALLADO Y HORMIGONADO) | 8d | 2020-11-16 | 2020-11-25 |  |  |
| 313 | LOSA N3-02 (EXC, HL, ENCOF, FERRALLADO Y HORMIGONADO) | 8d | 2021-02-15 | 2021-02-24 | 298 |  |
| 314 | LOSA N3-03 (EXC, HL, ENCOF, FERRALLADO Y HORMIGONADO) | 7d | 2021-06-01 | 2021-06-09 | 316FS-1d, 273FS-12d, 275FS-12d |  |
| 315 | LOSA N3-04 (EXC, HL, ENCOF, FERRALLADO Y HORMIGONADO) | 8d | 2021-05-12 | 2021-05-21 | 273FS-10d |  |
| 316 | LOSA N3-05 (EXC, HL, ENCOF, FERRALLADO Y HORMIGONADO) | 7d | 2021-05-24 | 2021-06-01 | 315 |  |
| 317 | **LOSA N4** | 53d | 2020-11-27 | 2021-02-25 |  |  |
| 318 | LOSA N4-01 (EXC, HL, ENCOF, FERRALLADO Y HORMIGONADO) | 7d | 2020-12-10 | 2020-12-18 | 319FS+2d |  |
| 319 | LOSA N4-02 (EXC, HL, ENCOF, FERRALLADO Y HORMIGONADO) | 7d | 2020-11-27 | 2020-12-07 |  |  |
| 320 | LOSA N4-03 (EXC, HL, ENCOF, FERRALLADO Y HORMIGONADO) | 7d | 2021-02-17 | 2021-02-25 | 321FS-2d, 285 |  |
| 321 | LOSA N4-04 (EXC, HL, ENCOF, FERRALLADO Y HORMIGONADO) | 7d | 2021-02-10 | 2021-02-18 | 318FS+6d, 285 |  |
| 322 | LOSA N5 | 12d | 2021-04-29 | 2021-05-14 | 273SS+5d, 275FS+5d |  |
| 323 | **LOSA C4** | 13d | 2021-02-24 | 2021-03-12 |  |  |
| 324 | LOSA C4-01 (EXC, HL, ENCOF, FERRALLADO Y HORMIGONADO) | 7d | 2021-03-04 | 2021-03-12 | 286, 325FS-5d |  |
| 325 | LOSA C4-02 (EXC, HL, ENCOF, FERRALLADO Y HORMIGONADO) | 7d | 2021-03-02 | 2021-03-10 | 286, 326FS-5d |  |
| 326 | LOSA C4-03 (EXC, HL, ENCOF, FERRALLADO Y HORMIGONADO) | 7d | 2021-02-26 | 2021-03-08 | 286, 327FS-5d |  |
| 327 | LOSA C4-04 (EXC, HL, ENCOF, FERRALLADO Y HORMIGONADO) | 7d | 2021-02-24 | 2021-03-04 | 286 |  |
| 328 | **MOVIMIENTO DE TIERRAS** | 201d | 2021-02-15 | 2021-11-26 |  |  |
| 329 | ZONA NORTE N0 | 17d | 2021-04-22 | 2021-05-14 | 330FS-1d |  |
| 330 | ZONA NORTE N1-1_2_5_6_7 | 45d | 2021-02-15 | 2021-04-22 | 298 |  |
| 331 | ZONA NORTE N1-3_4_8_9 | 30d | 2021-08-02 | 2021-09-10 | 296FS+6d, 297FS+6d |  |
| 332 | ZONA NORTE N2-1_2_6_7 | 40d | 2021-02-15 | 2021-04-15 | 298 |  |
| 333 | ZONA NORTE N2-3 | 9d | 2021-08-23 | 2021-09-02 | 331FS-15d |  |
| 334 | ZONA NORTE N2-4_5 | 11d | 2021-09-15 | 2021-09-29 | 333FS+8d |  |
| 335 | ZONA NORTE N2-8_9_10 | 6d | 2021-10-20 | 2021-10-27 | 352, 353, 355 |  |
| 336 | ZONA NORTE N2-11_12 | 11d | 2021-09-15 | 2021-09-29 | 334SS |  |
| 337 | ZONA NORTE N3-1_4 | 35d | 2021-06-21 | 2021-08-06 | 311FS+7d |  |
| 338 | ZONA NORTE N3-2_3_5 | 35d | 2021-06-21 | 2021-08-06 | 311FS+7d |  |
| 339 | ZONA NORTE N4-1_2 | 35d | 2021-07-19 | 2021-09-03 | 278FS+10d |  |
| 340 | ZONA NORTE N4-3_4 | 35d | 2021-07-19 | 2021-09-03 | 339SS |  |
| 341 | ZONA NORTE N5 | 15d | 2021-07-19 | 2021-08-06 | 278FS+10d |  |
| 342 | DEMOLICIÓN PANTALLA COMPARTIMENTACIÓN 1 | 0d | 2021-08-02 | 2021-08-02 | 331SS |  |
| 343 | DEMOLICIÓN PANTALLA COMPARTIMENTACIÓN 2A | 0d | 2021-09-02 | 2021-09-02 | 333 |  |
| 344 | DEMOLICIÓN PANTALLA COMPARTIMENTACIÓN 2B | 0d | 2021-10-06 | 2021-10-06 | 336FS+5d |  |
| 345 | DEMOLICIÓN PANTALLA COMPARTIMENTACIÓN ALDESA | 0d | 2021-09-15 | 2021-09-15 | 339FS+8d, 340FS+8d |  |
| 346 | REVESTIMIENTO/LIMPIEZA DE PANTALLAS | 105d | 2021-07-05 | 2021-11-26 | 270FS+28d |  |
| 347 | **LOSA INFERIOR** | 144d | 2021-04-19 | 2021-11-04 |  |  |
| 348 | ZONA NORTE N0 | 20d | 2021-05-17 | 2021-06-11 | 329 |  |
| 349 | ZONA NORTE N1-1_2_5_6_7 | 30d | 2021-06-14 | 2021-07-23 | 348 |  |
| 350 | ZONA NORTE N1-3_4_8_9 | 14d | 2021-09-13 | 2021-09-30 | 331 |  |
| 351 | ZONA NORTE N2-1_2_6_7 | 25d | 2021-04-19 | 2021-05-21 | 332FS+1d |  |
| 352 | ZONA NORTE N2-3 | 14d | 2021-09-30 | 2021-10-19 | 333FS+4d, 334, 336 |  |
| 353 | ZONA NORTE N2-4_5 | 14d | 2021-09-30 | 2021-10-19 | 334, 336 |  |
| 354 | ZONA NORTE N2-8_9_10 | 6d | 2021-10-28 | 2021-11-04 | 335 |  |
| 355 | ZONA NORTE N2-11_12 | 14d | 2021-09-30 | 2021-10-19 | 336 |  |
| 356 | ZONA NORTE N3-1_4 | 7d | 2021-08-20 | 2021-08-30 | 357FS-4d |  |
| 357 | ZONA NORTE N3-2_3_5 | 14d | 2021-08-06 | 2021-08-25 | 338FS-1d, 337FS-1d |  |
| 358 | ZONA NORTE N4-1_3 | 8d | 2021-09-06 | 2021-09-15 | 339, 340, 341 |  |
| 359 | ZONA NORTE N4-2_4 | 11d | 2021-09-16 | 2021-09-30 | 340, 341, 339, 358 |  |
| 360 | ZONA NORTE N5 | 6d | 2021-08-20 | 2021-08-27 | 357FS-4d |  |
| 361 | **VÍA, ANDENES Y ACABADOS** | 74d | 2021-09-16 | 2021-12-28 |  |  |
| 362 | TOPERAS | 23d | 2021-11-26 | 2021-12-28 | 394SS |  |
| 363 | **INFRAESTRUCTURA VÍA** | 50d | 2021-09-17 | 2021-11-25 |  |  |
| 364 | APROBACIÓN DISEÑO TIPO MANTA | 0d | 2021-09-17 | 2021-09-17 | 367SS-15d |  |
| 365 | **ZONA ALDESA** | 10d | 2021-10-01 | 2021-10-14 |  |  |
| 366 | PAQUETE HA30 FIBRAS 1 | 5d | 2021-10-01 | 2021-10-07 | 374FS+1d |  |
| 367 | MANTA ELASTOMÉRICA | 5d | 2021-10-08 | 2021-10-14 | 366 | finish no earlier than 2021-10-07 |
| 368 | PAQUETE HA30 FIBRAS 2 | 5d | 2021-10-08 | 2021-10-14 | 366 |  |
| 369 | **VASO NORTE** | 28d | 2021-10-19 | 2021-11-25 |  |  |
| 370 | PAQUETE HA30 FIBRAS 1 | 15d | 2021-10-19 | 2021-11-08 | 408SS+12d |  |
| 371 | MANTA ELASTOMÉRICA | 13d | 2021-11-09 | 2021-11-25 | 370 |  |
| 372 | PAQUETE HA30 FIBRAS 2 | 13d | 2021-11-09 | 2021-11-25 | 370 |  |
| 373 | **VÍA EN PLACA** | 74d | 2021-09-16 | 2021-12-28 |  |  |
| 374 | PICADO LOSA ZONA ALDESA | 10d | 2021-09-16 | 2021-09-29 | 345 |  |
| 375 | RECEPCIÓN DESVÍOS JCA20-21 Y CARRIL/TRAVIESAS ZONA ALDESA | 5d | 2021-10-15 | 2021-10-21 | 365 |  |
| 376 | REPARTO TRAVIESAS Y CARRIL ZONA ALDESA | 5d | 2021-10-22 | 2021-10-28 | 375, 365 |  |
| 377 | HORMIGONADO DESVÍOS JCA24-25 | 10d | 2021-10-29 | 2021-11-11 | 376 |  |
| 378 | MONTAJE Y HORMIGONADO DESVÍOS JCA17-20 | 10d | 2021-11-12 | 2021-11-25 | 377 |  |
| 379 | RECEPCIÓN RESTO DESVÍOS Y CARRIL/TRAVIESAS VASO NORTE | 5d | 2021-11-26 | 2021-12-02 | 394SS |  |
| 380 | REPARTO TRAVIESAS Y CARRIL VASO NORTE | 7d | 2021-11-26 | 2021-12-06 | 394SS |  |
| 381 | MONTAJE Y HORMIGONADO RESTO DESVÍOS VASO NORTE | 16d | 2021-12-03 | 2021-12-24 | 379 |  |
| 382 | **MONTAJE VÍA EN PLACA CONEXIÓN ALDESA** | 27d | 2021-10-22 | 2021-11-29 |  |  |
| 383 | COLOCACIÓN ARMADURA INFERIOR | 27d | 2021-10-22 | 2021-11-29 | 376SS |  |
| 384 | PUESTAS A TIERRA | 27d | 2021-10-22 | 2021-11-29 | 376SS |  |
| 385 | CORRIDO CARRILES | 27d | 2021-10-22 | 2021-11-29 | 376SS |  |
| 386 | COLOCACIÓN TRAVIESAS | 27d | 2021-10-22 | 2021-11-29 | 376SS |  |
| 387 | CLAVADO CARRIL | 27d | 2021-10-22 | 2021-11-29 | 376SS |  |
| 388 | MONTAJE PARRILLA SUPERIOR, SEPARADORES AISLANTES Y CABILLAS | 12d | 2021-11-12 | 2021-11-29 | 378SS |  |
| 389 | HUSILLOS, POSICIONADO DE VÍA Y REATADO ARMADURA INFERIOR | 27d | 2021-10-22 | 2021-11-29 | 376SS |  |
| 390 | LEVANTAMIENTO ARMADURA INFERIOR Y SEPARADORES | 27d | 2021-10-22 | 2021-11-29 | 376SS |  |
| 391 | NIVELACIÓN VÍA | 27d | 2021-10-22 | 2021-11-29 | 376SS |  |
| 392 | ENCOFRADO Y HORMIGONADO | 27d | 2021-10-22 | 2021-11-29 | 376SS |  |
| 393 | SOLDADURAS Y HOMOGENEIZACIÓN | 12d | 2021-11-12 | 2021-11-29 | 378SS |  |
| 394 | **MONTAJE VÍA EN PLACA VASO NORTE** | 23d | 2021-11-26 | 2021-12-28 |  |  |
| 395 | COLOCACIÓN ARMADURA INFERIOR | 23d | 2021-11-26 | 2021-12-28 | 372 |  |
| 396 | PUESTAS A TIERRA | 23d | 2021-11-26 | 2021-12-28 | 372 |  |
| 397 | CORRIDO CARRILES | 23d | 2021-11-26 | 2021-12-28 | 372 |  |
| 398 | COLOCACIÓN TRAVIESAS | 23d | 2021-11-26 | 2021-12-28 | 372 |  |
| 399 | CLAVADO CARRIL | 23d | 2021-11-26 | 2021-12-28 | 372 |  |
| 400 | MONTAJE PARRILLA SUPERIOR, SEPARADORES AISLANTES Y CABILLAS | 23d | 2021-11-26 | 2021-12-28 | 372 |  |
| 401 | HUSILLOS, POSICIONADO DE VÍA Y REATADO ARMADURA INFERIOR | 23d | 2021-11-26 | 2021-12-28 | 372 |  |
| 402 | LEVANTAMIENTO ARMADURA INFERIOR Y SEPARADORES | 23d | 2021-11-26 | 2021-12-28 | 372 |  |
| 403 | NIVELACIÓN VÍA | 23d | 2021-11-26 | 2021-12-28 | 372 |  |
| 404 | ENCOFRADO Y HORMIGONADO | 23d | 2021-11-26 | 2021-12-28 | 372 |  |
| 405 | SOLDADURAS Y HOMOGENEIZACIÓN | 23d | 2021-11-26 | 2021-12-28 | 372 |  |
| 406 | **ANDENES** | 73d | 2021-09-17 | 2021-12-28 |  |  |
| 407 | APROBACIÓN DISEÑO ANDENES | 0d | 2021-09-17 | 2021-09-17 | 408SS-10d |  |
| 408 | ZONA N0 | 63d | 2021-10-01 | 2021-12-28 | 348, 349, 350 |  |
| 409 | ZONA NORTE N1-1_2_5_6_7 | 63d | 2021-10-01 | 2021-12-28 | 348, 349, 350 |  |
| 410 | ZONA NORTE N1-3_4_8_9 | 63d | 2021-10-01 | 2021-12-28 | 348, 349, 350 |  |
| 411 | ZONA NORTE N2-1_2_6_7 | 63d | 2021-10-01 | 2021-12-28 | 351, 348, 349, 350 |  |
| 412 | ZONA NORTE N2-3 | 38d | 2021-11-05 | 2021-12-28 | 352, 355, 353, 351, 354 |  |
| 413 | ZONA NORTE N2-4_5 | 50d | 2021-10-20 | 2021-12-28 | 356, 357, 408SS, 336, 353 |  |
| 414 | ZONA NORTE N2-8_9_10 | 38d | 2021-11-05 | 2021-12-28 | 355, 353, 351, 352, 354 |  |
| 415 | ZONA NORTE N2-11_12 | 50d | 2021-10-20 | 2021-12-28 | 356, 357, 408SS, 336, 353 |  |
| 416 | ZONA NORTE N3-1_4 | 63d | 2021-10-01 | 2021-12-28 | 356, 357, 408SS |  |
| 417 | ZONA NORTE N3-2_3_5 | 63d | 2021-10-01 | 2021-12-28 | 357, 356, 408SS |  |
| 418 | INSTALACIONES Y DRENAJE | 63d | 2021-10-01 | 2021-12-28 | 348, 349, 350 |  |
| 419 | ACABADOS | 20d | 2021-12-01 | 2021-12-28 | 408SS-20d, 409FS-20d, 410FS-20d, 411FS-20d, 413FS-20d, 414FS-20d, 416FS-20d, 417FS-20d, 415FS-20d, 412FS-20d |  |
| 420 | **SALIDAS DE EMERGENCIA** | 38d | 2021-11-05 | 2021-12-28 |  |  |
| 421 | SE N1-5 | 38d | 2021-11-05 | 2021-12-28 | 412SS |  |
| 422 | SE N1-8 | 38d | 2021-11-05 | 2021-12-28 | 412SS |  |
| 423 | SE N2-8 | 38d | 2021-11-05 | 2021-12-28 | 412SS |  |
| 424 | SE N2-12 | 38d | 2021-11-05 | 2021-12-28 | 412SS |  |
| 425 | SE N3-5 | 38d | 2021-11-05 | 2021-12-28 | 412SS |  |
| 426 | **ACCESO PROVISIONAL ALTA VELOCIDAD SOTERRADA** | 324d | 2020-11-18 | 2022-03-18 |  |  |
| 427 | **TRABAJOS PREVIOS** | 5d | 2020-11-18 | 2020-11-24 |  |  |
| 428 | TRABAJOS PREVIOS | 5d | 2020-11-18 | 2020-11-24 | 125FS+18d |  |
| 429 | **MOVIMIENTO DE TIERRAS** | 16d | 2020-11-25 | 2020-12-16 |  |  |
| 430 | LIMPIEZA Y RETIRADA DE VARIOS (AMPL.LOSA) | 3d | 2020-11-25 | 2020-11-27 | 428 |  |
| 431 | RETIRADA DE PAVIMENTACION Y ASFALTO EXISTENTE (AMPL.LOSA) | 6d | 2020-11-30 | 2020-12-07 | 430 |  |
| 432 | EXCAVACIÓN LOSA (AMPL.LOSA) | 5d | 2020-12-08 | 2020-12-14 | 431 |  |
| 433 | RELLENO ZAHORRA COMPACTADA (AMPL.LOSA) | 2d | 2020-12-15 | 2020-12-16 | 432 |  |
| 434 | **CIMENTACIÓN** | 57d | 2021-01-18 | 2021-04-12 |  |  |
| 435 | ZAPATAS | 12d | 2021-01-18 | 2021-02-02 | 433FS+10d |  |
| 436 | ENCEPADO DE LOSA MACIZA HORMIGÓN ARMADO (AMPL.LOSA) | 8d | 2021-02-19 | 2021-03-02 | 437 |  |
| 437 | CONECTORES DE LOSA A MURO PERIMETRAL (AMPL.LOSA) | 12d | 2021-02-03 | 2021-02-18 | 435 |  |
| 438 | MURO DE CONTENCION. PERIMETRO EDÍCULO | 20d | 2021-03-10 | 2021-04-12 | 435FS+25d, 436, 437 |  |
| 439 | **ESTRUCTURA** | 94d | 2021-03-03 | 2021-07-16 |  |  |
| 440 | PLACAS DE ANCLAJE (LOSA DE 1 M.) | 3d | 2021-04-13 | 2021-04-15 | 438 |  |
| 441 | PLACAS DE ANCLAJE (AMP.LOSA ) | 2d | 2021-03-03 | 2021-03-04 | 436 |  |
| 442 | FORJADO SANITARIO | 16d | 2021-04-13 | 2021-05-04 | 438 |  |
| 443 | ESTRUCTURA ACERO PERFILES LAMINADOS | 40d | 2021-05-12 | 2021-07-06 | 442FS+5d |  |
| 444 | FORJADO COLABORANTE | 8d | 2021-07-07 | 2021-07-16 | 443 |  |
| 445 | **ESCALERA HA ACCESO VASO NORTE** | 10d | 2021-10-01 | 2021-10-14 |  |  |
| 446 | MURO HA APOYO | 10d | 2021-10-01 | 2021-10-14 | 408SS |  |
| 447 | ZANCA Y PELDAÑEADO DE ESCALERA DE HORMIGON | 10d | 2021-10-01 | 2021-10-14 | 408SS |  |
| 448 | **CUBIERTA** | 60d | 2021-07-07 | 2021-09-28 |  |  |
| 449 | PETOS CUBIERTA PERIMETRAL | 8d | 2021-07-07 | 2021-07-16 | 444FS-8d |  |
| 450 | PETOS LUCERNARIOS | 8d | 2021-07-07 | 2021-07-16 | 444FS-8d |  |
| 451 | CUBIERTA LOSA FILTRÓN | 20d | 2021-07-19 | 2021-08-13 | 449, 450 |  |
| 452 | CUBIERTA PANEL SANDWICH | 10d | 2021-09-15 | 2021-09-28 | 451FS+22d |  |
| 453 | **ALBAÑILERÍA** | 42d | 2021-08-30 | 2021-10-26 |  |  |
| 454 | **MUROS DE CERRAMIENTO TIPO M1** | 42d | 2021-08-30 | 2021-10-26 |  |  |
| 455 | ESTRUCTURA METÁLICA | 15d | 2021-08-30 | 2021-09-17 | 439FS+30d |  |
| 456 | PANEL GRC | 15d | 2021-09-20 | 2021-10-08 | 455 |  |
| 457 | PROYECTADO AISLAMIENTO | 5d | 2021-10-11 | 2021-10-15 | 456 |  |
| 458 | FÁBRICA DE LADRILLO | 7d | 2021-10-18 | 2021-10-26 | 457 |  |
| 459 | **DIVISIONES INTERIORES** | 42d | 2021-08-30 | 2021-10-26 |  |  |
| 460 | ESTRUCTURA METÁLICA | 15d | 2021-08-30 | 2021-09-17 | 455SS |  |
| 461 | FÁBRICA DE LADRILLO | 7d | 2021-10-18 | 2021-10-26 | 460, 458SS |  |
| 462 | **ELEMENTOS PREFABRICADOS** | 10d | 2021-10-27 | 2021-11-09 |  |  |
| 463 | ALBARDILLA PETOS CUBIERTA Y LUCERNARIOS | 5d | 2021-10-27 | 2021-11-02 | 448, 454 |  |
| 464 | CORONACIÓN FACHADA PANEL SANDWICH | 10d | 2021-10-27 | 2021-11-09 | 448, 454 |  |
| 465 | **REVESTIMIENTOS Y FALSOS TECHOS** | 85d | 2021-10-27 | 2022-03-04 |  |  |
| 466 | ENFOSCADOS | 7d | 2021-10-27 | 2021-11-04 | 458, 461 |  |
| 467 | AZULEJOS | 7d | 2021-11-05 | 2021-11-15 | 466 |  |
| 468 | FALSOS TECHOS | 10d | 2022-02-21 | 2022-03-04 | 491FS-20d |  |
| 469 | **LUCERNARIOS** | 50d | 2021-12-01 | 2022-02-18 |  |  |
| 470 | MURETES | 20d | 2021-12-01 | 2022-01-10 | 471SF |  |
| 471 | ESTRUCTURA METÁLICA Y TRAMEX | 30d | 2022-01-10 | 2022-02-18 | 404 |  |
| 472 | TAPADO HUECOS | 30d | 2022-01-10 | 2022-02-18 | 404 |  |
| 473 | **SOLADOS** | 10d | 2021-11-16 | 2021-11-29 |  |  |
| 474 | PAVIMENTOS INTERIOR | 10d | 2021-11-16 | 2021-11-29 | 467 |  |
| 475 | PELDAÑEADO-SOLADO DE ESCALERA | 5d | 2021-11-16 | 2021-11-22 | 445, 474SS |  |
| 476 | CARPINTERÍA DE MADERA | 5d | 2021-11-30 | 2021-12-06 | 473 |  |
| 477 | **CARPINTERÍA DE ALUMINIO** | 20d | 2021-11-02 | 2021-11-29 |  |  |
| 478 | MURO CORTINA | 10d | 2021-11-02 | 2021-11-15 | 473SS-10d |  |
| 479 | LUCERNARIOS | 10d | 2021-11-16 | 2021-11-29 | 480SS |  |
| 480 | VENTANAS | 10d | 2021-11-16 | 2021-11-29 | 456, 467 |  |
| 481 | **PUERTAS AUTOMÁTICAS -CERRAJERÍA** | 10d | 2021-11-16 | 2021-11-29 |  |  |
| 482 | PUERTAS AUTOMATICAS | 4d | 2021-11-16 | 2021-11-19 | 478 |  |
| 483 | TRAMPILLA CUBIERTA | 10d | 2021-11-16 | 2021-11-29 | 479SS |  |
| 484 | BARANDILLAS | 5d | 2021-11-23 | 2021-11-29 | 475 |  |
| 485 | PINTURAS | 10d | 2022-02-21 | 2022-03-04 | 491FS-20d |  |
| 486 | SEÑALÉTICA | 30d | 2022-01-31 | 2022-03-11 | 542SS-30d |  |
| 487 | **SISTEMAS DE ELEVACIÓN** | 63d | 2021-10-01 | 2021-12-28 |  |  |
| 488 | FOSOS | 5d | 2021-10-01 | 2021-10-07 | 408SS |  |
| 489 | ASCENSOR Y MONTACARGAS | 22d | 2021-10-15 | 2021-11-15 | 488, 408SS+10d |  |
| 490 | ESCALERAS MECÁNICAS | 10d | 2021-12-15 | 2021-12-28 | 406FS-10d |  |
| 491 | **INSTALACIONES** | 220d | 2021-05-05 | 2022-03-18 |  |  |
| 492 | ACOMETIDAS DESDE EDIFICIO EXISTENTE | 30d | 2022-02-07 | 2022-03-18 | 542FS-30d |  |
| 493 | **CLIMATIZACIÓN Y RENOVACIÓN DE AIRE** | 85d | 2021-09-01 | 2021-12-28 |  |  |
| 494 | DISEÑO | 0d | 2021-09-01 | 2021-09-01 | 495SS |  |
| 495 | SUMINISTRO | 20d | 2021-09-01 | 2021-09-28 | 496SS-20d |  |
| 496 | EQUIPOS CLIMATIZACION | 65d | 2021-09-29 | 2021-12-28 | 448 |  |
| 497 | EQUIPOS VENTILACION | 65d | 2021-09-29 | 2021-12-28 | 496SS |  |
| 498 | DISTRIBUCION DE AIRE | 65d | 2021-09-29 | 2021-12-28 | 496SS |  |
| 499 | DISTRIBUCION LIQUIDO REFRIGERANTE | 65d | 2021-09-29 | 2021-12-28 | 496SS |  |
| 500 | CONTROL | 65d | 2021-09-29 | 2021-12-28 | 496SS |  |
| 501 | PRUEBAS, PUESTA EN MARCHA Y DOCUMENTACIÓN | 20d | 2021-12-01 | 2021-12-28 | 500FS-20d |  |
| 502 | **PROTECCIÓN CONTRA INCENDIOS** | 130d | 2021-09-01 | 2022-03-11 |  |  |
| 503 | DISEÑO | 0d | 2021-09-01 | 2021-09-01 | 504SS |  |
| 504 | SUMINISTRO | 60d | 2021-09-01 | 2021-11-23 | 505SS-60d |  |
| 505 | EXTINCIÓN y DETECCIÓN | 70d | 2021-11-24 | 2022-03-11 | 406FS-25d |  |
| 506 | **FONTANERÍA** | 36d | 2021-10-29 | 2021-12-17 |  |  |
| 507 | DISTRIBUCION GENERAL | 36d | 2021-10-29 | 2021-12-17 | 406SS+30d |  |
| 508 | APARATOS SANITARIOS | 10d | 2021-11-30 | 2021-12-13 | 467, 474 |  |
| 509 | PRUEBAS, PUESTA EN MARCHA Y DOCUMENTACIÓN | 20d | 2021-11-22 | 2021-12-17 | 507FS-20d |  |
| 510 | **SANEAMIENTO** | 155d | 2021-05-05 | 2021-12-07 |  |  |
| 511 | RED HORIZONTAL DE SANEAMIENTO ASEOS, PLUVIALES, CANALETA.. | 150d | 2021-05-05 | 2021-11-30 | 442 |  |
| 512 | PRUEBAS, PUESTA EN MARCHA Y DOCUMENTACIÓN | 5d | 2021-12-01 | 2021-12-07 | 511 |  |
| 513 | **INSTALACIÓN ELÉCTRICA** | 130d | 2021-09-01 | 2022-03-11 |  |  |
| 514 | DISEÑO | 0d | 2021-09-01 | 2021-09-01 | 503SS |  |
| 515 | SUMINISTRO | 50d | 2021-09-01 | 2021-11-09 | 514 |  |
| 516 | ALUMBRADO, EMERGENCIAS, PTOS LUZ Y TOMAS CORRIENTE | 40d | 2021-11-10 | 2022-01-14 | 515 |  |
| 517 | CUADROS ELECTRICOS | 40d | 2022-01-17 | 2022-03-11 | 516 |  |
| 518 | CABLEADO Y CANALIZACION | 80d | 2021-11-10 | 2022-03-11 | 515 |  |
| 519 | PUESTA A TIERRA | 66d | 2021-09-17 | 2021-12-17 | 406SS |  |
| 520 | PRUEBAS, PUESTA EN MARCHA Y DOCUMENTACIÓN | 20d | 2022-02-14 | 2022-03-11 | 517FS-20d, 518FS-20d |  |
| 521 | **CCTV Y SEGURIDAD** | 130d | 2021-09-01 | 2022-03-11 |  |  |
| 522 | DISEÑO | 0d | 2021-09-01 | 2021-09-01 | 503SS |  |
| 523 | SUMINISTRO | 90d | 2021-09-01 | 2022-01-14 | 522 |  |
| 524 | CCTV | 40d | 2022-01-17 | 2022-03-11 | 523 |  |
| 525 | PROTECCION CONTRA INTRUSION | 40d | 2022-01-17 | 2022-03-11 | 523 |  |
| 526 | CONTROL DE ACCESOS | 40d | 2022-01-17 | 2022-03-11 | 523 |  |
| 527 | CONTEO DE PERSONAS | 40d | 2022-01-17 | 2022-03-11 | 523 |  |
| 528 | **TELECOMUNICACIONES - VOZ Y DATOS** | 118d | 2021-09-01 | 2022-02-23 |  |  |
| 529 | DISEÑO | 0d | 2021-09-01 | 2021-09-01 | 503SS |  |
| 530 | SUMINISTRO | 30d | 2021-09-01 | 2021-10-12 | 529 |  |
| 531 | RED ESTRUCTURADA | 88d | 2021-10-13 | 2022-02-23 | 530 |  |
| 532 | TELEVISION | 88d | 2021-10-13 | 2022-02-23 | 530 |  |
| 533 | SISTEMA DE INFORMACION AL VIAJERO | 88d | 2021-10-13 | 2022-02-23 | 530 |  |
| 534 | MEGAFONIA, CRONOMETRÍA E INTERFONIA | 88d | 2021-10-13 | 2022-02-23 | 530 |  |
| 535 | **GESTIÓN CENTRALIZADA** | 120d | 2021-09-01 | 2022-02-25 |  |  |
| 536 | DISEÑO | 0d | 2021-09-01 | 2021-09-01 | 503SS |  |
| 537 | SUMINISTRO | 60d | 2021-09-01 | 2021-11-23 | 536 |  |
| 538 | INSTALACIÓN | 60d | 2021-11-24 | 2022-02-25 | 537 |  |
| 539 | **PUESTA EN MARCHA DEL CONJUNTO DE LAS INSTALACIONES** | 15d | 2022-02-28 | 2022-03-18 |  |  |
| 540 | PUESTA EN MARCHA DE LAS INSTALACIONES | 10d | 2022-02-28 | 2022-03-11 | 493FS-10d, 502FS-10d, 506FS-10d, 510FS-10d, 513FS-10d, 521FS-10d, 528FS-10d, 535FS-10d, 487FS-10d |  |
| 541 | PRUEBAS Y ENSAYOS | 10d | 2022-02-28 | 2022-03-11 | 493FS-10d, 502FS-10d, 506FS-10d, 510FS-10d, 513FS-10d, 521FS-10d, 528FS-10d, 535FS-10d, 487FS-10d |  |
| 542 | ENSAYOS FINALES (E.T.I.) - CETREN | 5d | 2022-03-14 | 2022-03-18 | 540, 541, 406 |  |
| 543 | REMATES Y TERMINACIONES | 5d | 2022-03-14 | 2022-03-18 | 542SS |  |
| 544 | **ZONA CENTRAL ESTACIÓN** | 555d | 2021-04-12 | 2023-07-10 |  |  |
| 545 | **HITOS** | 180d | 2021-05-27 | 2022-02-15 |  |  |
| 546 | CORTE TRÁFICO FERROVIARIO | 0d | 2022-02-15 | 2022-02-15 |  |  |
| 547 | APROBACIÓN MODIFICADO 2 | 0d | 2021-11-01 | 2021-11-01 |  |  |
| 548 | APROBACIÓN DISEÑO LOSA CENTRAL | 0d | 2021-12-06 | 2021-12-06 | 589SS-14d |  |
| 549 | APROBACIÓN DISEÑO NUEVA ESTACIÓN DEL CARMEN | 0d | 2021-12-06 | 2021-12-06 | 589SS-14d |  |
| 550 | APROBACIÓN PANTALLAS PK- | 0d | 2021-12-13 | 2021-12-13 | 577SS-8d |  |
| 551 | APROBACIÓN PLAN DESAMIANTADO ESTACIÓN | 0d | 2021-05-27 | 2021-05-27 |  | start no earlier than 2021-05-27 |
| 552 | DISPOSICIÓN ACCESO FLORIDABLANCA | 0d | 2022-02-15 | 2022-02-15 | 546SS |  |
| 553 | ANULACIÓN ACCESO OFICINAS MANTENIMIENTO | 0d | 2022-02-15 | 2022-02-15 | 546SS |  |
| 554 | **DESMONTAJE MARQUESINAS EDIFICIO HISTÓRICO** | 20d | 2021-06-04 | 2021-07-01 |  |  |
| 555 | DESAMIANTADO | 13d | 2021-06-04 | 2021-06-22 | 551FS+6d |  |
| 556 | ESTRUCTURAS | 7d | 2021-06-23 | 2021-07-01 | 555 |  |
| 557 | **PASO INFERIOR ESTACIÓN DEL CARMEN** | 51d | 2021-07-02 | 2021-09-10 |  |  |
| 558 | DEMOLICIÓN | 46d | 2021-07-09 | 2021-09-10 | 559 |  |
| 559 | DESMONTAJE ASCENSORES | 5d | 2021-07-02 | 2021-07-08 | 556 |  |
| 560 | CORTE TABLESTACADO | 16d | 2021-08-20 | 2021-09-10 | 558SS+30d |  |
| 561 | **DEMOLICIÓN ANDÉN ESTACIÓN DEL CARMEN** | 20d | 2021-09-13 | 2021-10-08 |  |  |
| 562 | RIPADO SSAA | 10d | 2021-09-27 | 2021-10-08 | 563SS+10d |  |
| 563 | DEMOLICIÓN | 15d | 2021-09-13 | 2021-10-01 | 558 |  |
| 564 | **VÍA MANGO LADO LORCA** | 70d | 2022-02-15 | 2022-05-27 |  |  |
| 565 | RETIRADA DE VÍA | 20d | 2022-02-15 | 2022-03-14 | 546 |  |
| 566 | RIPADO SSAA | 20d | 2022-02-15 | 2022-03-14 | 546, 553 |  |
| 567 | PANTALLAS | 20d | 2022-03-15 | 2022-04-11 | 565, 566 |  |
| 568 | LOSA C1_Mango | 19d | 2022-04-12 | 2022-05-12 | 567 |  |
| 569 | TOPERA | 19d | 2022-04-12 | 2022-05-12 | 567 |  |
| 570 | LIMPIEZA Y ACABADOS | 1d | 2022-05-13 | 2022-05-13 | 569 |  |
| 571 | CMS-CAF | 10d | 2022-05-16 | 2022-05-27 | 570 |  |
| 572 | MÉNSULA C4 | 30d | 2021-11-12 | 2021-12-23 | 347FS+5d |  |
| 573 | PILOTES | 89d | 2021-04-12 | 2021-08-12 | 279FS-15d |  |
| 574 | **PANTALLAS** | 140d | 2021-11-11 | 2022-06-10 |  |  |
| 575 | **PANTALLA NORTE** | 90d | 2021-11-11 | 2022-03-28 |  |  |
| 576 | PK+ SALTO DE LOSA | 30d | 2021-11-11 | 2021-12-23 | 561, 577SF |  |
| 577 | **PK- SALTO DE LOSA** | 60d | 2021-12-23 | 2022-03-28 |  |  |
| 578 | > NN180 | 30d | 2021-12-23 | 2022-02-15 | 579SF |  |
| 579 | < NN180 | 30d | 2022-02-15 | 2022-03-28 | 546 |  |
| 580 | **PANTALLA SUR** | 60d | 2022-03-15 | 2022-06-10 |  |  |
| 581 | **PK- SALTO DE LOSA** | 60d | 2022-03-15 | 2022-06-10 |  |  |
| 582 | > SS180 | 20d | 2022-03-15 | 2022-04-11 | 567SS |  |
| 583 | < SS180 | 40d | 2022-04-12 | 2022-06-10 | 582 |  |
| 584 | **LOSA SUPERIOR** | 329d | 2021-05-17 | 2022-09-05 |  |  |
| 585 | REBAJE TERRENO | 250d | 2021-05-17 | 2022-05-17 | 573SS+25d |  |
| 586 | C1- | 30d | 2022-06-20 | 2022-07-29 | 574FS+5d |  |
| 587 | C1+ | 30d | 2022-01-12 | 2022-02-22 | 576FS+6d |  |
| 588 | C1_Mango | 19d | 2022-04-12 | 2022-05-12 | 568SS |  |
| 589 | C2 | 50d | 2021-12-24 | 2022-03-15 | 572 |  |
| 590 | C3-C4 | 120d | 2022-03-16 | 2022-09-05 | 589 |  |
| 591 | VACIADO TÚNEL | 181d | 2022-03-28 | 2022-12-09 | 589FS+8d |  |
| 592 | LOSA INFERIOR | 171d | 2022-06-07 | 2023-02-21 | 591SS+47d |  |
| 593 | VÍA E INSTALACIONES | 95d | 2023-02-22 | 2023-07-10 | 592 |  |
| 594 | VARIOS | 95d | 2023-02-22 | 2023-07-10 | 592 |  |
| 595 | **NUEVA ESTACIÓN DEL CARMEN** | 321d | 2022-03-16 | 2023-07-10 | 547 |  |
| 596 | NUEVA ESTACIÓN DEL CARMEN | 243d | 2022-03-16 | 2023-03-16 | 549, 589 |  |
| 597 | VARIOS | 78d | 2023-03-17 | 2023-07-10 | 596 |  |
| 598 | **BARRIOMAR - TÚNEL DE LÍNEA** | 492d | 2021-10-25 | 2023-10-25 |  |  |
| 599 | **HITOS BM** | 492d | 2021-10-25 | 2023-10-25 |  |  |
| 600 | INICIO PRIVACIÓN DERECHO USO C/ORILLA DE LA VÍA - DESBLOQUEO PARALIZACIÓN TEMPORAL | 0d | 2021-10-25 | 2021-10-25 |  | start no earlier than 2021-10-25 |
| 601 | FIN PRIVACIÓN DERECHO USO C/ORILLA DE LA VÍA | 0d | 2023-10-25 | 2023-10-25 | 619, 627, 635 |  |
| 602 | FIN PANTALLAS BM | 0d | 2022-11-02 | 2022-11-02 | 630 |  |
| 603 | COMIENZO MONTAJE VÍA BM | 0d | 2023-03-28 | 2023-03-28 | 610SS |  |
| 604 | **PK 0+000 - 0+868. CARRIL DE LOS MIAJAS/CAMINO ALBADEL (900m)** | 421d | 2022-02-02 | 2023-10-16 |  |  |
| 605 | SSAA/SERVIDUMBRES | 120d | 2022-02-02 | 2022-07-25 | 606SF+90d |  |
| 606 | PANTALLAS | 90d | 2022-03-16 | 2022-07-25 | 614FS+4d, 622FS+4d |  |
| 607 | LOSA SUPERIOR | 90d | 2022-05-31 | 2022-10-03 | 606FS-40d |  |
| 608 | VACIADO TÚNEL | 160d | 2022-07-26 | 2023-03-27 | 607SS+40d |  |
| 609 | LOSA INFERIOR | 160d | 2022-09-20 | 2023-05-26 | 608SS+40d |  |
| 610 | VÍA E INSTALACIONES | 79d | 2023-03-28 | 2023-07-20 | 609FS-40d, 632FS-15d, 624FS-15d, 616FS-15d |  |
| 611 | VARIOS | 82d | 2023-06-23 | 2023-10-16 | 610FS-20d |  |
| 612 | **PK 0+868 - 1+231. CAMINO ALBADEL/CALLE BENSIDA (400m)** | 485d | 2021-10-25 | 2023-10-16 |  |  |
| 613 | SSAA/SERVIDUMBRES | 383d | 2021-10-25 | 2023-05-25 | 600 |  |
| 614 | PANTALLAS | 80d | 2021-11-08 | 2022-03-09 | 613SS+10d |  |
| 615 | LOSA SUPERIOR | 80d | 2022-02-10 | 2022-06-07 | 614FS-20d |  |
| 616 | VACIADO TÚNEL | 90d | 2022-04-07 | 2022-08-16 | 615SS+40d |  |
| 617 | LOSA INFERIOR | 90d | 2022-06-08 | 2022-10-11 | 616SS+40d |  |
| 618 | VÍA E INSTALACIONES | 47d | 2023-06-23 | 2023-08-28 | 610FS-20d, 617FS-10d, 632FS-10d, 624FS-10d |  |
| 619 | VARIOS | 55d | 2023-08-01 | 2023-10-16 | 618FS-20d |  |
| 620 | **PK 1+231 - 1+620. CALLE BENSIDA/CALLE BARRIOMAR (400m)** | 485d | 2021-10-25 | 2023-10-16 |  |  |
| 621 | SSAA/SERVIDUMBRES | 383d | 2021-10-25 | 2023-05-25 | 600 |  |
| 622 | PANTALLAS | 80d | 2021-11-08 | 2022-03-09 | 621SS+10d |  |
| 623 | LOSA SUPERIOR | 80d | 2022-02-10 | 2022-06-07 | 622FS-20d |  |
| 624 | VACIADO TÚNEL | 90d | 2022-04-07 | 2022-08-16 | 623SS+40d |  |
| 625 | LOSA INFERIOR | 90d | 2022-06-08 | 2022-10-11 | 624SS+40d |  |
| 626 | VÍA E INSTALACIONES | 45d | 2023-08-15 | 2023-10-16 | 610FS-10d, 618FS-10d, 625FS-10d, 632FS-10d |  |
| 627 | VARIOS | 20d | 2023-09-19 | 2023-10-16 | 626FS-20d |  |
| 628 | **PK 1+620 - 1+822. A-30/CRUCE FLORIDABLANCA (200m)** | 492d | 2021-10-25 | 2023-10-25 |  |  |
| 629 | SSAA/SERVIDUMBRES | 383d | 2021-10-25 | 2023-05-25 | 621SS |  |
| 630 | PANTALLAS | 70d | 2022-07-28 | 2022-11-02 | 606FS+2d |  |
| 631 | LOSA SUPERIOR | 40d | 2022-10-06 | 2022-11-30 | 630FS-20d |  |
| 632 | VACIADO TÚNEL | 50d | 2022-12-01 | 2023-03-01 | 631SS+40d |  |
| 633 | LOSA INFERIOR | 40d | 2023-02-16 | 2023-04-18 | 632SS+40d |  |
| 634 | VÍA E INSTALACIONES | 43d | 2023-08-28 | 2023-10-25 | 626SS | start no earlier than 2023-08-28 |
| 635 | VARIOS | 20d | 2023-09-28 | 2023-10-25 | 634FS-20d |  |
| 636 | **NONDUERMAS - TÚNEL DE LÍNEA** | 492d | 2021-10-25 | 2023-10-25 |  |  |
| 637 | **HITOS ND** | 453d | 2021-10-25 | 2023-09-01 |  |  |
| 638 | DESBLOQUEO PARALIZACIÓN TEMPORAL | 0d | 2021-10-25 | 2021-10-25 | 600SS |  |
| 639 | FIN PANTALLAS ND | 0d | 2022-09-05 | 2022-09-05 | 663 |  |
| 640 | COMIENZO MONTAJE VÍA ND | 0d | 2023-09-01 | 2023-09-01 | 644SS, 651SS, 659SS, 667SS, 675SS |  |
| 641 | **PK 0+000 - 0+717. ACEQUÍA MAYOR ALQUIBLA/CALLE LIBERTAD (700m)** | 492d | 2021-10-25 | 2023-10-25 |  |  |
| 642 | **PK 0+000 - 0+280. PLATAFORMA EN TIERRAS** | 452d | 2021-12-20 | 2023-10-25 |  |  |
| 643 | SSAA/SERVIDUMBRES | 40d | 2021-12-20 | 2022-02-23 | 647 |  |
| 644 | VÍA E INSTALACIONES | 36d | 2023-09-01 | 2023-10-20 | 651SS |  |
| 645 | VARIOS | 13d | 2023-10-09 | 2023-10-25 | 644FS-10d |  |
| 646 | **PK 0+280 - 0+670. RAMPA ENTRE PANTALLAS** | 492d | 2021-10-25 | 2023-10-25 |  |  |
| 647 | SSAA/SERVIDUMBRES | 40d | 2021-10-25 | 2021-12-17 | 638 |  |
| 648 | PANTALLAS | 80d | 2021-12-20 | 2022-04-26 | 647 |  |
| 649 | VACIADO TÚNEL | 60d | 2022-04-27 | 2022-07-19 | 648 |  |
| 650 | LOSA INFERIOR | 100d | 2022-06-22 | 2022-11-08 | 649SS+40d |  |
| 651 | VÍA E INSTALACIONES | 36d | 2023-09-01 | 2023-10-20 | 650FS-20d, 675FS-20d, 667FS-20d |  |
| 652 | VARIOS | 13d | 2023-10-09 | 2023-10-25 | 651FS-10d |  |
| 653 | **PK 0+670 - 0+717. RAMPA ENTRE PANTALLAS CON ESTAMPIDORES** | 380d | 2022-04-11 | 2023-10-25 |  |  |
| 654 | SSAA/SERVIDUMBRES | 10d | 2022-04-11 | 2022-04-29 | 655SF |  |
| 655 | PANTALLAS | 10d | 2022-04-29 | 2022-05-12 | 648FS+2d |  |
| 656 | ESTAMPIDORES | 10d | 2022-05-13 | 2022-05-26 | 655 |  |
| 657 | VACIADO TÚNEL | 15d | 2022-05-27 | 2022-06-16 | 656 |  |
| 658 | LOSA INFERIOR | 15d | 2022-06-17 | 2022-07-07 | 657 |  |
| 659 | VÍA E INSTALACIONES | 36d | 2023-09-01 | 2023-10-20 | 651SS |  |
| 660 | VARIOS | 13d | 2023-10-09 | 2023-10-25 | 659FS-10d |  |
| 661 | **PK 0+717 - 1+217. CALLE LIBERTAD/RM-611 : TÚNEL (500m)** | 401d | 2022-03-02 | 2023-10-16 |  |  |
| 662 | SSAA/SERVIDUMBRES | 50d | 2022-03-02 | 2022-05-17 | 663SF |  |
| 663 | PANTALLAS | 80d | 2022-05-17 | 2022-09-05 | 655FS+2d |  |
| 664 | LOSA SUPERIOR | 100d | 2022-08-23 | 2023-01-30 | 663FS-10d |  |
| 665 | VACIADO TÚNEL | 115d | 2022-10-18 | 2023-04-21 | 664SS+40d |  |
| 666 | LOSA INFERIOR | 115d | 2022-12-13 | 2023-06-16 | 665SS+40d |  |
| 667 | VÍA E INSTALACIONES | 50d | 2023-07-21 | 2023-09-28 | 649FS-20d, 657FS-20d, 665FS-20d, 666FS-20d, 675FS-30d |  |
| 668 | VARIOS | 32d | 2023-09-01 | 2023-10-16 | 667FS-20d |  |
| 669 | **PK 1+217 - 2+160. RM-611/CALLE ESPERANZA : ESTAMPIDORES (1000m)** | 485d | 2021-10-25 | 2023-10-16 |  |  |
| 670 | SSAA/SERVIDUMBRES | 160d | 2021-10-25 | 2022-06-21 | 638 |  |
| 671 | PANTALLAS | 170d | 2021-11-08 | 2022-07-19 | 670SS+10d |  |
| 672 | ESTAMPIDORES | 100d | 2022-06-22 | 2022-11-08 | 671FS-20d |  |
| 673 | VACIADO TÚNEL | 200d | 2022-08-17 | 2023-06-19 | 672SS+40d |  |
| 674 | LOSA INFERIOR | 193d | 2022-10-12 | 2023-08-03 | 673SS+40d |  |
| 675 | VÍA E INSTALACIONES | 80d | 2023-05-12 | 2023-08-31 | 649FS-40d, 657FS-40d, 665FS-40d, 673FS-40d, 674FS-60d |  |
| 676 | VARIOS | 52d | 2023-08-04 | 2023-10-16 | 675FS-20d |  |
| 677 | **PK 2+160 - 2+503,793. CALLE ESPERANZA/CARRIL DE LOS MIAJAS : TÚNEL (350m)** | 343d | 2021-10-25 | 2023-03-24 |  |  |
| 678 | SSAA/SERVIDUMBRES | 60d | 2021-10-25 | 2022-01-26 | 670SS |  |
| 679 | PANTALLAS | 65d | 2021-11-08 | 2022-02-16 | 678SS+10d |  |
| 680 | LOSA SUPERIOR | 65d | 2022-01-20 | 2022-04-26 | 679FS-20d |  |
| 681 | VACIADO TÚNEL | 80d | 2022-03-17 | 2022-07-12 | 680SS+40d |  |
| 682 | LOSA INFERIOR | 80d | 2022-05-18 | 2022-09-06 | 681SS+40d |  |
| 683 | VÍA E INSTALACIONES | 50d | 2022-07-27 | 2022-10-04 | 682FS-30d |  |
| 684 | VARIOS | 128d | 2022-09-07 | 2023-03-24 | 683FS-20d |  |

Removed: 1 RST Adv. Sample Project; 2 Division 1; 3 Substructure; 4 Piles and Caps; 5 Floor Slab (Floor 0); 6 Floor 1; 7 Emergency staircase shaft; 8 Concrete Rd Columns; 9 Beams and Floor Slab (Floor 1); 10 Floor 2; 11 Emergency staircase shaft; 12 Concrete Rd Columns; 13 Beams and Floor Slab (Floor 2); 14 Floor 3; 15 Emergency staircase shaft; 31 Division 3; 32 Substructure; 34 Floor Slab (Floor 0); 35 Floor 1; 39 Floor 2; 41 Concrete Rd Columns; 42 Beams and Floor Slab (Floor 2); 43 Floor 3; 44 Emergency staircase shaft; 45 Concrete Rd Columns; 46 Beams and Roof Slab

Changed:

| ID | Task | Start | Finish | Duration | Total float | Predecessors | Other |
| --- | --- | --- | --- | --- | --- | --- | --- |
| 1 | **OBRA CIVIL PLAYA DE VÍAS SUR & PASARELA ESTACIÓN** | 2010-04-12 → 2020-07-20 (+3752d) | 2010-05-07 → 2020-12-15 (+3875d) | 20d → 107d | 40d → 0d | 14 → none | was named Beams and Roof Slab |
| 14 | **PANTALLAS** | 2010-03-15 → 2020-07-20 (+3780d) | 2010-04-09 → 2020-11-04 (+3862d) | 20d → 78d | 40d → 0d | Beams and Floor Slab (Floor 2) → none | was named Concrete Rd Columns |
| 46 | FERRALLADO Y ENCOFRADO LOSA S1-08 | 2009-11-09 → 2020-08-10 (+3927d) | 2010-06-04 → 2020-08-13 (+3723d) | 150d → 4d | 9d → 18d | none → 42FS+3d | was named Division 2 |
| 47 | HORMIGONADO LOSA S1-08 | 2009-11-09 → 2020-08-13 (+3930d) | 2009-12-02 → 2020-08-13 (+3907d) | 18d → 1d | 12d → 38d | none → 45, 46FS-1d | was named Substructure |
| 49 | HORMIGÓN DE LIMPIEZA LOSA S1-10 | 2009-11-09 → 2020-08-04 (+3921d) | 2009-11-20 → 2020-08-07 (+3913d) | 10d → 4d | 12d → none | Piles and Caps → none | was named Piles and Caps |
| 50 | FERRALLADO Y ENCOFRADO LOSA S1-10 | 2009-11-23 → 2020-08-12 (+3915d) | 2009-12-02 → 2020-08-17 (+3911d) | 8d → 4d | 12d → 18d | 49 → 46FS-2d | was named Floor Slab (Floor 0) |
| 51 | HORMIGONADO LOSA S1-10 | 2009-12-21 → 2020-08-18 (+3893d) | 2010-02-12 → 2020-08-18 (+3840d) | 40d → 1d | 0d → 28d | none → 49, 50 | was named Floor 1 |
| 54 | FERRALLADO Y ENCOFRADO LOSA S1-04 | 2009-12-21 → 2020-08-14 (+3889d) | 2010-01-15 → 2020-08-19 (+3869d) | 20d → 4d | 0d → 18d | 50, Concrete Rd Columns → 50FS-2d | was named Concrete Rd Columns |
| 55 | HORMIGONADO LOSA S1-04 | 2010-01-18 → 2020-08-21 (+3868d) | 2010-02-12 → 2020-08-21 (+3843d) | 20d → 1d | 9d → 36d | 54 → 53, 54FS+1d | was named Beams and Floor Slab (Floor 1) |
| 57 | HORMIGÓN DE LIMPIEZA LOSA S1-09 | 2010-02-15 → 2020-08-10 (+3829d) | 2010-04-09 → 2020-08-13 (+3779d) | 40d → 4d | 9d → none |  | was named Floor 2 |
| 59 | HORMIGONADO LOSA S1-09 | 2010-02-15 → 2020-08-25 (+3844d) | 2010-03-12 → 2020-08-25 (+3819d) | 20d → 1d | 9d → 23d | 55 → 57, 58FS+1d | was named Concrete Rd Columns |
| 63 | HORMIGONADO LOSA S1-11 | 2010-06-07 → 2020-08-27 (+3734d) | 2010-06-21 → 2020-08-27 (+3720d) | 11d → 1d | 9d → 21d | none → 61, 62FS+1d | was named Entrance canopy |
| 65 | HORMIGÓN DE LIMPIEZA LOSA S1-12 | 2010-06-14 → 2020-08-24 (+3724d) | 2010-06-14 → 2020-08-26 (+3726d) | 1d → 3d | 9d → none | 78 → none | was named Steel |
| 73 | HORMIGÓN DE LIMPIEZA LOSA S1-16 | 2010-03-15 → 2020-08-25 (+3816d) | 2010-04-09 → 2020-09-02 (+3799d) | 20d → 7d | 9d → none | 59 → none | was named Beams and Floor Slab (Floor 2) |
| 74 | FERRALLADO Y ENCOFRADO LOSA S1-16 | 2010-04-12 → 2020-09-04 (+3798d) | 2010-06-04 → 2020-09-10 (+3751d) | 40d → 5d |  | none → 58, 30, 73 | was named Floor 3 |
| 78 | FERRALLADO Y ENCOFRADO LOSA S1-15 | 2010-06-07 → 2020-09-07 (+3745d) | 2010-06-11 → 2020-09-11 (+3745d) |  |  | 82 → 77, 30 | was named Round foundations |
| 81 | HORMIGÓN DE LIMPIEZA LOSA S1-14 | 2010-04-12 → 2020-09-08 (+3802d) | 2010-05-07 → 2020-09-14 (+3783d) | 20d → 5d | 9d → 0d | 73 → 77FS+1d | was named Concrete Rd Columns |
| 82 | FERRALLADO Y ENCOFRADO LOSA S1-14 | 2010-05-10 → 2020-09-15 (+3781d) | 2010-06-04 → 2020-09-17 (+3758d) | 20d → 3d | 9d → 0d |  | was named Beams and Roof Slab |
| 134 | **INFRAESTRUCTURA, SUPERESTRUCTURA DE VÍA Y ANDENES** | 2009-11-23 → 2020-08-25 (+3928d) | 2009-12-04 → 2020-12-01 (+4015d) | 10d → 71d | 22d → 0d | 49 → none | was named Piles and Caps |
| 137 | Rebaje de tierras contaminadas V13S, V11S y V9S | 2009-12-17 → 2020-08-28 (+3907d) | 2009-12-25 → 2020-09-16 (+3918d) | 7d → 14d | 128d → 0d | Floor Slab (Floor 0), Emergency staircase shaft → 29, 197, 136FS-2d | was named Emergency staircase shaft |
| 139 | Extendido de material de molienda V13S, V11S y V9S | 2010-01-18 → 2020-09-14 (+3892d) | 2010-02-12 → 2020-10-02 (+3885d) | 20d → 15d |  | Floor Slab (Floor 0), 54 → 137FS-3d, 136FS-3d | was named Concrete Rd Columns |
| 140 | Extendido de capa de forma V13S, V11S y V9S | 2010-02-15 → 2020-09-29 (+3879d) | 2010-03-12 → 2020-10-06 (+3861d) | 20d → 6d |  | 139 → 139FS-4d, 137, 138FF | was named Beams and Floor Slab (Floor 1) |
| 180 | Drenaje | 2010-03-15 → 2020-10-01 (+3853d) | 2010-03-23 → 2020-10-23 (+3867d) | 7d → 17d | 73d → 0d | 137, 140 → 140FS-4d | was named Emergency staircase shaft |
| 238 | PUESTA EN MARCHA | 2010-06-15 → 2020-12-15 (+3836d) | 2010-06-21 → 2020-12-15 (+3830d) | 5d → 1d | 9d → 0d | 65 → 233FS-1d | was named Concrete Roof |
